# 项目WBS-v0.2

Schedule from MS Project, 2017-09-28 to 2018-01-12, costs in ¥, A marks actual dates.

## Calendars

- 标准: Mon-Sun 08:00-12:00, 13:00-17:00. Exceptions (off unless hours are given): 2017-11-05 08:00-12:00, 13:00-17:00.

## Resources

| Resource | Rate |
| --- | --- |
| 戴恺铖 | 31 |
| 朱赛奎 | 31 |
| 陈潮鸣 | 31 |
| 周骏迪 | 31 |
| 陈豪明 | 31 |

## Schedule

| ID | WBS | Task | Type | Duration | Start | Finish | Predecessors | Complete | Constraint | Resources | Work | Actual work | Cost | Actual cost | 负责人 | 相关人员 |
| --- | --- | --- | --- | --- | --- | --- | --- | --- | --- | --- | --- | --- | --- | --- | --- | --- |
| 1 | 1 | **项目准备** |  | 25.12d | 2017-09-28 09:00 A | 2017-10-23 10:00 A |  | 100% |  |  | 22h | 22h | 682 | 682 |  |  |
| 2 | 1.1 | 项目小组成立 | manual | 2h | 2017-09-28 09:00 A | 2017-09-28 11:00 A |  | 100% |  |  |  |  |  |  | 戴恺铖 | 陈潮鸣、陈豪明、朱赛奎、周骏迪 |
| 3 | 1.2 | Git培训 | manual | 2h | 2017-10-04 08:00 A | 2017-10-04 10:00 A | 2 | 100% |  | 陈豪明 [80%]; 戴恺铖 [5%]; 朱赛奎 [5%]; 周骏迪 [5%]; 陈潮鸣 [5%] | 2h | 2h | 62 | 62 | 陈豪明 | 陈潮鸣、戴恺铖、朱赛奎、周骏迪 |
| 4 | 1.3 | 软件配置统一安装 | manual | 1h | 2017-10-06 08:00 A | 2017-10-06 09:00 A | 2 | 100% |  | 陈豪明 [80%]; 戴恺铖 [5%]; 朱赛奎 [5%]; 周骏迪 [5%]; 陈潮鸣 [5%] | 1h | 1h | 31 | 31 | 陈豪明 | 陈潮鸣、陈豪明、朱赛奎、周骏迪 |
| 5 | 1.4 | 文档模板搜集 | manual | 2h | 2017-10-06 08:00 A | 2017-10-06 10:00 A | 2 | 100% |  | 戴恺铖 [20%]; 陈豪明 [20%]; 朱赛奎 [20%]; 陈潮鸣 [20%]; 周骏迪 [20%] | 2h | 2h | 62 | 62 |  |  |
| 6 | 1.5 | logo设计 | manual | 2h | 2017-10-07 08:00 A | 2017-10-07 10:00 A | 2 | 100% |  | 戴恺铖 [50%]; 陈豪明 [50%] | 2h | 2h | 62 | 62 | 戴恺铖 | 陈豪明 |
| 7 | 1.6 | 可行性分析V1.0 | milestone, manual | 8h | 2017-10-12 09:00 A | 2017-10-13 09:00 A |  | 100% |  | 戴恺铖 [20%]; 陈豪明 [20%]; 朱赛奎 [20%]; 陈潮鸣 [20%]; 周骏迪 [20%] | 8h | 8h | 248 | 248 | 戴恺铖 | 陈潮鸣、陈豪明、朱赛奎、周骏迪 |
| 8 | 1.7 | 项目章程 | milestone, manual | 2h | 2017-10-23 08:00 A | 2017-10-23 10:00 A |  | 100% | finish no earlier than 2017-10-22 18:00 | 戴恺铖 [20%]; 陈豪明 [20%]; 朱赛奎 [20%]; 陈潮鸣 [20%]; 周骏迪 [20%] | 2h | 2h | 62 | 62 | 戴恺铖 | 陈潮鸣、陈豪明、朱赛奎、周骏迪 |
| 9 | 1.8 | 第二周第一次例会 | manual | 1h | 2017-10-12 08:00 A | 2017-10-12 09:00 A |  | 100% |  | 戴恺铖 [20%]; 陈豪明 [20%]; 朱赛奎 [20%]; 陈潮鸣 [20%]; 周骏迪 [20%] | 1h | 1h | 31 | 31 |  |  |
| 10 | 1.9 | 第二周第二次例会 | manual | 1h | 2017-10-15 08:00 A | 2017-10-15 09:00 A | 9 | 100% |  | 戴恺铖 [20%]; 陈豪明 [20%]; 朱赛奎 [20%]; 陈潮鸣 [20%]; 周骏迪 [20%] | 1h | 1h | 31 | 31 |  |  |
| 11 | 1.10 | 第三周第一次例会 | manual | 1h | 2017-10-16 08:00 A | 2017-10-16 09:00 A | 10 | 100% |  | 戴恺铖 [20%]; 陈豪明 [20%]; 朱赛奎 [20%]; 陈潮鸣 [20%]; 周骏迪 [20%] | 1h | 1h | 31 | 31 |  |  |
| 12 | 1.11 | 第三周第二次例会 | manual | 1h | 2017-10-20 08:00 A | 2017-10-20 09:00 A | 11 | 100% |  | 戴恺铖 [20%]; 陈豪明 [20%]; 朱赛奎 [20%]; 陈潮鸣 [20%]; 周骏迪 [20%] | 1h | 1h | 31 | 31 |  |  |
| 13 | 1.12 | 第三周第三次例会 | manual | 1h | 2017-10-22 08:00 A | 2017-10-22 09:00 A | 12 | 100% |  | 戴恺铖 [20%]; 陈豪明 [20%]; 朱赛奎 [20%]; 陈潮鸣 [20%]; 周骏迪 [20%] | 1h | 1h | 31 | 31 |  |  |
| 14 | 2 | **项目计划** |  | 6.38d | 2017-10-23 08:00 A | 2017-10-29 11:00 A | 1 | 100% |  |  | 24.2h | 24.2h | 750.2 | 750.2 | 戴恺铖 | 陈潮鸣、陈豪明、周骏迪、朱赛奎 |
| 15 | 2.1 | 《需求工程计划》模板搜集 | manual | 1h | 2017-10-23 08:00 A | 2017-10-23 09:00 A | 13 | 100% |  | 戴恺铖 [20%]; 朱赛奎 [20%]; 陈潮鸣 [20%]; 周骏迪 [20%]; 陈豪明 [20%] | 1h | 1h | 31 | 31 | 朱赛奎 | 周骏迪 |
| 16 | 2.2 | 第四周第一次例会 | manual | 1h | 2017-10-25 08:00 A | 2017-10-25 09:00 A | 15 | 100% |  | 戴恺铖 [20%]; 朱赛奎 [20%]; 陈潮鸣 [20%]; 周骏迪 [20%]; 陈豪明 [20%] | 1h | 1h | 31 | 31 |  | 陈潮鸣、陈豪明、周骏迪、朱赛奎 |
| 17 | 2.3 | 项目各阶段负责人确定 | manual | 1h | 2017-10-25 08:48 A | 2017-10-25 09:48 A | 16 | 100% |  | 戴恺铖 [20%]; 朱赛奎 [20%]; 陈潮鸣 [20%]; 周骏迪 [20%]; 陈豪明 [20%] | 1h | 1h | 31 | 31 |  |  |
| 18 | 2.4 | UML画图工具确认 | manual | 2h | 2017-10-26 08:48 A | 2017-10-26 10:48 A | 16 | 100% |  | 戴恺铖 [20%]; 朱赛奎 [20%]; 陈潮鸣 [20%]; 周骏迪 [20%]; 陈豪明 [20%] | 2h | 2h | 62 | 62 |  |  |
| 19 | 2.5 | 初步了解UML | manual | 5h | 2017-10-27 08:00 A | 2017-10-27 14:00 A | 16 | 100% |  | 戴恺铖 [20%]; 朱赛奎 [20%]; 陈潮鸣 [20%]; 周骏迪 [20%]; 陈豪明 [20%] | 5h | 5h | 155 | 155 | 戴恺铖 | 陈潮鸣、陈豪明、周骏迪、朱赛奎 |
| 20 | 2.6 | UML概述PPT制作 | manual | 1h | 2017-10-28 08:00 A | 2017-10-28 09:00 A | 19 | 100% |  | 朱赛奎 [5%]; 陈潮鸣 [85%]; 陈豪明 [10%] | 0.6h | 0.6h | 18.6 | 18.6 | 陈潮鸣 | 朱赛奎、陈豪明 |
| 21 | 2.7 | 第四周第二次例会 | manual | 1h | 2017-10-28 13:00 A | 2017-10-28 14:00 A | 20 | 100% |  | 朱赛奎 [20%]; 陈潮鸣 [20%]; 陈豪明 [20%]; 戴恺铖 [20%]; 周骏迪 [20%] | 1h | 1h | 31 | 31 |  |  |
| 22 | 2.8 | 《需求工程计划》文档编写 | manual | 3h | 2017-10-28 14:00 A | 2017-10-28 17:00 A | 21 | 100% |  | 戴恺铖 [5%]; 朱赛奎 [40%]; 陈潮鸣 [10%]; 周骏迪 [40%]; 陈豪明 [5%] | 3h | 3h | 93 | 93 | 朱赛奎、周骏迪 |  |
| 23 | 2.9 | 《需求工程计划》甘特图 | manual | 6h | 2017-10-28 13:48 A | 2017-10-29 10:48 A | 21 | 100% |  | 戴恺铖 [30%]; 朱赛奎 [10%]; 陈潮鸣; 周骏迪; 陈豪明 [70%] | 6.6h | 6.6h | 204.6 | 204.6 | 戴恺铖、陈豪明 |  |
| 24 | 2.10 | 《需求工程计划》V1.0 | manual | 2h | 2017-10-29 08:00 A | 2017-10-29 10:00 A | 22 | 100% |  | 戴恺铖 [50%]; 朱赛奎 [10%]; 陈潮鸣 [30%]; 周骏迪 [10%]; 陈豪明 | 2h | 2h | 62 | 62 | 朱赛奎、周骏迪 |  |
| 25 | 2.11 | 第四周第三次例会 | manual | 1h | 2017-10-29 10:00 A | 2017-10-29 11:00 A | 24 | 100% |  | 戴恺铖 [20%]; 朱赛奎 [20%]; 陈潮鸣 [20%]; 周骏迪 [20%]; 陈豪明 [20%] | 1h | 1h | 31 | 31 | 戴恺铖 | 陈潮鸣、陈豪明、周骏迪、朱赛奎 |
| 26 | 2.12 | 《需求工程计划-初步》提交 | milestone, manual | 0h | 2017-10-29 11:00 A | 2017-10-29 11:00 A | 25 | 100% |  |  |  |  |  |  | 戴恺铖 |  |

| ID | WBS | Task | Type | Duration | Start | Finish | Predecessors | Complete | Remaining | Total slack | Resources | Work | Actual work | Cost | Actual cost | 负责人 | 相关人员 |
| --- | --- | --- | --- | --- | --- | --- | --- | --- | --- | --- | --- | --- | --- | --- | --- | --- | --- |
| 27 | 3 | **项目实施** |  | 47.5d | 2017-11-01 08:00 A | 2017-12-18 12:00 |  | 4% | 45.62d | 0d |  | 177.6h | 7.6h | 5,505.6 | 235.6 |  |  |
| 28 | 3.1 | **需求获取** |  | 13.5d | 2017-11-01 08:00 A | 2017-11-14 12:00 | 14 | 10% | 12.09d | 0d |  | 67.6h | 7.6h | 2,095.6 | 235.6 | 戴恺铖 | 陈潮鸣、陈豪明、周骏迪、朱赛奎 |
| 29 | 3.1.1 | 《需求工程计划》甘特图完善 | manual | 6h | 2017-11-02 08:00 A | 2017-11-02 15:00 A | 26 | 100% |  |  | 戴恺铖 [30%]; 朱赛奎 [10%]; 陈潮鸣; 周骏迪; 陈豪明 [70%] | 6.6h | 6.6h | 204.6 | 204.6 | 戴恺铖、陈豪明 |  |
| 30 | 3.1.2 | 《需求工程计划-初步》ppt制作 | milestone, manual | 0h | 2017-11-01 08:00 A | 2017-11-01 08:00 A | 26 | 100% |  |  | 戴恺铖 [5%]; 朱赛奎 [40%]; 陈潮鸣 [10%]; 周骏迪 [40%]; 陈豪明 [5%] |  |  |  |  | 朱赛奎、周骏迪 |  |
| 31 | 3.1.3 | 第五周第一次例会 | manual | 1h | 2017-11-02 08:00 A | 2017-11-02 09:00 A | 26 | 100% |  |  | 戴恺铖 [20%]; 朱赛奎 [20%]; 陈潮鸣 [20%]; 周骏迪 [20%]; 陈豪明 [20%] | 1h | 1h | 31 | 31 | 戴恺铖 | 陈潮鸣、陈豪明、周骏迪、朱赛奎 |
| 32 | 3.1.4 | 定义愿景和范围 | manual | 2h | 2017-11-03 08:00 | 2017-11-03 10:00 | 31 |  |  |  | 戴恺铖 [60%]; 朱赛奎 [10%]; 陈潮鸣 [10%]; 周骏迪 [10%]; 陈豪明 [10%] | 2h |  | 62 |  |  |  |
| 33 | 3.1.5 | 识别用户群 | manual | 2h | 2017-11-03 10:00 | 2017-11-03 12:00 | 32 |  |  |  | 戴恺铖 [60%]; 朱赛奎 [10%]; 陈潮鸣 [10%]; 周骏迪 [10%]; 陈豪明 [10%] | 2h |  | 62 |  |  |  |
| 34 | 3.1.6 | UML工具:RationalRose 学习 | manual | 4h | 2017-11-03 08:00 | 2017-11-03 12:00 | 31 |  |  |  | 戴恺铖 [10%]; 朱赛奎 [30%]; 陈潮鸣 [10%]; 周骏迪 [40%]; 陈豪明 [10%] | 4h |  | 124 |  |  |  |
| 35 | 3.1.7 | RationalRose心得PPT制作 | manual | 2h | 2017-11-04 08:00 | 2017-11-04 10:00 | 34 |  |  |  | 戴恺铖 [10%]; 朱赛奎 [40%]; 陈潮鸣 [5%]; 周骏迪 [40%]; 陈豪明 [5%] | 2h |  | 62 |  | 周骏迪 | 陈潮鸣、陈豪明、戴恺铖、朱赛奎 |
| 36 | 3.1.8 | 《需求工程计划》完善 | manual | 2h | 2017-11-03 08:00 | 2017-11-03 10:00 | 31 |  |  |  | 戴恺铖 [20%]; 朱赛奎 [20%]; 陈潮鸣 [20%]; 周骏迪 [20%]; 陈豪明 [20%] | 2h |  | 62 |  | 周骏迪、朱赛奎 | 戴恺铖、陈潮鸣、陈豪明 |
| 37 | 3.1.9 | 《需求工程计划》V1.0编写 | manual | 4h | 2017-11-03 13:48 | 2017-11-04 08:48 | 36 |  |  |  | 戴恺铖 [10%]; 朱赛奎 [35%]; 陈潮鸣 [10%]; 周骏迪 [35%]; 陈豪明 [10%] | 4h |  | 124 |  | 周骏迪、朱赛奎 | 戴恺铖、陈潮鸣、陈豪明 |
| 38 | 3.1.10 | 组织焦点小组 | manual | 2h | 2017-11-03 13:00 | 2017-11-03 15:00 | 33 |  |  |  | 戴恺铖 [60%]; 朱赛奎 [10%]; 陈潮鸣 [10%]; 周骏迪 [10%]; 陈豪明 [10%] | 2h |  | 62 |  |  |  |
| 39 | 3.1.11 | 选择产品代言人 | manual | 2h | 2017-11-03 15:00 | 2017-11-03 17:00 | 38 |  |  |  | 戴恺铖 [60%]; 朱赛奎 [10%]; 陈潮鸣 [10%]; 周骏迪 [10%]; 陈豪明 [10%] | 2h |  | 62 |  |  |  |
| 40 | 3.1.12 | 识别系统事件和响应 | manual | 2h | 2017-11-04 08:00 | 2017-11-04 10:00 | 39 |  |  |  | 戴恺铖 [60%]; 朱赛奎 [10%]; 陈潮鸣 [10%]; 周骏迪 [10%]; 陈豪明 [10%] | 2h |  | 62 |  |  |  |
| 41 | 3.1.13 | 识别用户需求 | manual | 2h | 2017-11-04 10:00 | 2017-11-04 12:00 | 40 |  |  |  | 戴恺铖 [60%]; 朱赛奎 [10%]; 陈潮鸣 [10%]; 周骏迪 [10%]; 陈豪明 [10%] | 2h |  | 62 |  |  |  |
| 42 | 3.1.14 | 第五周第二次例会 | manual | 1h | 2017-11-05 08:00 | 2017-11-05 09:00 | 37 |  |  |  | 戴恺铖 [20%]; 朱赛奎 [20%]; 陈潮鸣 [20%]; 周骏迪 [20%]; 陈豪明 [20%] | 1h |  | 31 |  |  |  |
| 43 | 3.1.15 | 《需求工程计划》V1.0提交 | milestone, manual | 0h | 2017-11-05 09:00 | 2017-11-05 09:00 | 42 |  |  |  |  |  |  |  |  | 戴恺铖 |  |
| 44 | 3.1.16 | 第六周第一次例会 | manual | 1h | 2017-11-05 09:00 | 2017-11-05 10:00 | 43 |  |  |  | 戴恺铖 [20%]; 朱赛奎 [20%]; 陈潮鸣 [20%]; 周骏迪 [20%]; 陈豪明 [20%] | 1h |  | 31 |  |  |  |
| 45 | 3.1.17 | 需求获取访谈 | manual | 2h | 2017-11-06 08:00 | 2017-11-06 10:00 | 44 |  |  |  | 戴恺铖 [60%]; 朱赛奎 [10%]; 陈潮鸣 [10%]; 周骏迪 [10%]; 陈豪明 [10%] | 2h |  | 62 |  |  |  |
| 46 | 3.1.18 | 举行引导式需求获取讨论会 | manual | 1h | 2017-11-06 08:00 | 2017-11-06 09:00 | 44 |  |  |  | 戴恺铖 [20%]; 朱赛奎 [20%]; 陈潮鸣 [20%]; 周骏迪 [20%]; 陈豪明 [20%] | 1h |  | 31 |  |  |  |
| 47 | 3.1.19 | UML基础Ⅰ学习(用例图、类图、状态图、顺序图、协作图、部署图) | manual | 4h | 2017-11-10 08:00 | 2017-11-10 12:00 | 44 |  |  |  | 戴恺铖; 朱赛奎; 陈潮鸣 [40%]; 周骏迪 [60%]; 陈豪明 | 4h |  | 124 |  | 周骏迪 | 陈潮鸣 |
| 48 | 3.1.20 | UML基础Ⅰ心得PPT制作 | manual | 2h | 2017-11-11 08:48 | 2017-11-11 10:48 | 47 |  |  |  | 戴恺铖; 朱赛奎; 陈潮鸣 [40%]; 周骏迪 [60%]; 陈豪明 | 2h |  | 62 |  | 周骏迪 | 陈潮鸣 |
| 49 | 3.1.21 | 修改《需求工程计划》 | manual | 4h | 2017-11-11 08:00 | 2017-11-11 12:00 | 44 |  |  |  | 戴恺铖 [20%]; 朱赛奎 [20%]; 陈潮鸣 [20%]; 周骏迪 [20%]; 陈豪明 [20%] | 4h |  | 124 |  | 朱赛奎、周骏迪 | 戴恺铖、陈潮鸣、陈豪明 |
| 50 | 3.1.22 | 《需求工程计划》V2.0提交 | milestone, manual | 0h | 2017-11-12 08:00 | 2017-11-12 08:00 | 49 |  |  |  |  |  |  |  |  | 戴恺铖 |  |
| 51 | 3.1.23 | 第六周第二次例会 | manual | 1h | 2017-11-12 08:48 | 2017-11-12 09:48 | 50 |  |  |  | 戴恺铖 [20%]; 朱赛奎 [20%]; 陈潮鸣 [20%]; 周骏迪 [20%]; 陈豪明 [20%] | 1h |  | 31 |  |  |  |
| 52 | 3.1.24 | 分发调查问卷 | manual | 4h | 2017-11-13 08:00 | 2017-11-13 12:00 | 51 |  |  |  | 戴恺铖 [20%]; 朱赛奎 [20%]; 陈潮鸣 [20%]; 周骏迪 [20%]; 陈豪明 [20%] | 4h |  | 124 |  |  |  |
| 53 | 3.1.25 | 观察用户如何完成工作 | manual | 4h | 2017-11-13 08:00 | 2017-11-13 12:00 | 51 |  |  |  | 戴恺铖 [60%]; 朱赛奎 [10%]; 陈潮鸣 [10%]; 周骏迪 [10%]; 陈豪明 [10%] | 4h |  | 124 |  |  |  |
| 54 | 3.1.26 | 分析文档 | manual | 4h | 2017-11-14 08:00 | 2017-11-14 12:00 | 51 |  |  |  | 戴恺铖 [10%]; 朱赛奎 [40%]; 陈潮鸣 [10%]; 周骏迪 [40%]; 陈豪明 | 4h |  | 124 |  | 朱赛奎、周骏迪 | 戴恺铖、陈潮鸣、陈豪明 |
| 55 | 3.1.27 | 检查问题报告 | manual | 4h | 2017-11-13 08:00 | 2017-11-13 12:00 | 51 |  |  |  | 戴恺铖 [20%]; 朱赛奎 [20%]; 陈潮鸣 [20%]; 周骏迪 [20%]; 陈豪明 [20%] | 4h |  | 124 |  |  |  |
| 56 | 3.1.28 | 重用已有的需求 | manual | 4h | 2017-11-13 08:00 | 2017-11-13 12:00 | 51 |  |  |  | 戴恺铖 [20%]; 朱赛奎 [20%]; 陈潮鸣 [20%]; 周骏迪 [20%]; 陈豪明 [20%] | 4h |  | 124 |  |  |  |

| ID | WBS | Task | Type | Duration | Start | Finish | Predecessors | Total slack | Resources | Work | Cost | 负责人 | 相关人员 |
| --- | --- | --- | --- | --- | --- | --- | --- | --- | --- | --- | --- | --- | --- |
| 57 | 3.2 | **需求分析** |  | 7.5d | 2017-11-14 08:00 | 2017-11-21 12:00 | 28 | 0d |  | 51h | 1,581 | 陈潮鸣 | 戴恺铖、陈豪明、朱赛奎、周骏迪 |
| 58 | 3.2.1 | 第七周第一次例会 | manual | 1h | 2017-11-14 08:00 | 2017-11-14 09:00 | 55 |  | 戴恺铖 [20%]; 朱赛奎 [20%]; 陈潮鸣 [20%]; 周骏迪 [20%]; 陈豪明 [20%] | 1h | 31 |  |  |
| 59 | 3.2.2 | 应用环境建模 | manual | 4h | 2017-11-17 08:00 | 2017-11-17 12:00 | 58 |  | 戴恺铖 [20%]; 朱赛奎 [20%]; 陈潮鸣 [20%]; 周骏迪 [20%]; 陈豪明 [20%] | 4h | 124 |  |  |
| 60 | 3.2.3 | 创建原型 | manual | 8h | 2017-11-17 08:00 | 2017-11-17 17:00 | 58 |  | 戴恺铖 [20%]; 朱赛奎 [20%]; 陈潮鸣 [20%]; 周骏迪 [20%]; 陈豪明 [20%] | 8h | 248 |  |  |
| 61 | 3.2.4 | 分析可实现性 | manual | 4h | 2017-11-17 08:00 | 2017-11-17 12:00 | 58 |  | 戴恺铖 [10%]; 朱赛奎 [20%]; 陈潮鸣 [40%]; 周骏迪 [20%]; 陈豪明 [10%] | 4h | 124 |  |  |
| 62 | 3.2.5 | 排列需求优先级 | manual | 2h | 2017-11-17 08:00 | 2017-11-17 10:00 | 58 |  | 戴恺铖 [10%]; 朱赛奎 [20%]; 陈潮鸣 [40%]; 周骏迪 [20%]; 陈豪明 [10%] | 2h | 62 |  |  |
| 63 | 3.2.6 | UML界面原型了解 | manual | 4h | 2017-11-18 08:00 | 2017-11-18 12:00 | 58 |  | 戴恺铖 [20%]; 朱赛奎 [30%]; 陈潮鸣 [10%]; 周骏迪 [20%]; 陈豪明 [20%] | 4h | 124 | 朱赛奎 | 戴恺铖、陈潮鸣、陈豪明、周骏迪 |
| 64 | 3.2.7 | UML界面原型PPT制作 | manual | 3h | 2017-11-19 08:00 | 2017-11-19 11:00 | 63 |  | 戴恺铖 [20%]; 朱赛奎 [30%]; 陈潮鸣 [10%]; 周骏迪 [20%]; 陈豪明 [20%] | 3h | 93 | 朱赛奎 | 戴恺铖、陈潮鸣、陈豪明、周骏迪 |
| 65 | 3.2.8 | 第七周第二次例会 | manual | 1h | 2017-11-19 11:12 | 2017-11-19 13:12 | 64 |  | 戴恺铖 [20%]; 朱赛奎 [20%]; 陈潮鸣 [20%]; 周骏迪 [20%]; 陈豪明 [20%] | 1h | 31 |  |  |
| 66 | 3.2.9 | 创建数据字典 | manual | 8h | 2017-11-20 08:00 | 2017-11-20 17:00 | 65 |  | 戴恺铖 [10%]; 朱赛奎 [20%]; 陈潮鸣 [40%]; 周骏迪 [20%]; 陈豪明 [10%] | 8h | 248 |  |  |
| 67 | 3.2.10 | 需求建模 | manual | 8h | 2017-11-20 08:00 | 2017-11-20 17:00 | 65 |  | 戴恺铖 [10%]; 朱赛奎 [20%]; 陈潮鸣 [40%]; 周骏迪 [20%]; 陈豪明 [10%] | 8h | 248 |  |  |
| 68 | 3.2.11 | 分析接口 | manual | 4h | 2017-11-21 08:00 | 2017-11-21 12:00 | 65 |  | 戴恺铖 [10%]; 朱赛奎 [20%]; 陈潮鸣 [40%]; 周骏迪 [20%]; 陈豪明 [10%] | 4h | 124 |  |  |
| 69 | 3.2.12 | 将需求分配到子系统 | manual | 4h | 2017-11-20 08:00 | 2017-11-20 12:00 | 65 |  | 戴恺铖 [10%]; 朱赛奎 [20%]; 陈潮鸣 [40%]; 周骏迪 [20%]; 陈豪明 [10%] | 4h | 124 |  |  |
| 70 | 3.3 | **需求规格说明** |  | 17.12d | 2017-11-23 08:00 | 2017-12-10 09:00 | 57 | 0d |  | 37h | 1,147 | 周骏迪 | 戴恺铖、陈潮鸣、陈豪明、朱赛奎 |
| 71 | 3.3.1 | 第八周第一次会议 | manual | 1h | 2017-11-23 08:00 | 2017-11-23 09:00 | 69 |  | 戴恺铖 [20%]; 朱赛奎 [20%]; 陈潮鸣 [20%]; 周骏迪 [20%]; 陈豪明 [20%] | 1h | 31 |  |  |
| 72 | 3.3.2 | 采用需求规范文档模板 | manual | 2h | 2017-11-24 08:00 | 2017-11-24 10:00 | 71 |  | 戴恺铖 [10%]; 朱赛奎 [10%]; 陈潮鸣 [10%]; 周骏迪 [60%]; 陈豪明 [10%] | 2h | 62 |  |  |
| 73 | 3.3.3 | UML基础Ⅲ学习(对象图、构建图、包图) | manual | 4h | 2017-11-25 08:00 | 2017-11-25 12:00 | 71 |  | 戴恺铖 [20%]; 朱赛奎 [20%]; 陈潮鸣 [20%]; 周骏迪 [20%]; 陈豪明 [20%] | 4h | 124 |  |  |
| 74 | 3.3.4 | UML基础Ⅲ制作PPT | manual | 3h | 2017-11-25 13:00 | 2017-11-25 16:00 | 73 |  | 戴恺铖 [5%]; 朱赛奎 [85%]; 陈潮鸣; 周骏迪; 陈豪明 [10%] | 3h | 93 | 朱赛奎 | 戴恺铖、陈豪明 |
| 75 | 3.3.5 | 第八周第二次会议 | manual | 1h | 2017-11-26 08:00 | 2017-11-26 09:00 | 74 |  | 戴恺铖 [20%]; 朱赛奎 [20%]; 陈潮鸣 [20%]; 周骏迪 [20%]; 陈豪明 [20%] | 1h | 31 |  |  |
| 76 | 3.3.6 | 记录业务规则 | manual | 4h | 2017-11-26 09:00 | 2017-11-26 14:00 | 75 |  | 戴恺铖 [10%]; 朱赛奎 [10%]; 陈潮鸣 [10%]; 周骏迪 [60%]; 陈豪明 [10%] | 4h | 124 | 周骏迪 | 戴恺铖、陈潮鸣、陈豪明、朱赛奎 |
| 77 | 3.3.7 | 第九周第一次会议 | manual | 1h | 2017-11-30 08:00 | 2017-11-30 09:00 | 76 |  | 戴恺铖 [20%]; 朱赛奎 [20%]; 陈潮鸣 [20%]; 周骏迪 [20%]; 陈豪明 [20%] | 1h | 31 |  |  |
| 78 | 3.3.8 | UML基础Ⅳ学习(综合应用和问题解答) | manual | 4h | 2017-12-01 08:00 | 2017-12-01 12:00 | 77 |  | 戴恺铖 [20%]; 朱赛奎 [20%]; 陈潮鸣 [20%]; 周骏迪 [20%]; 陈豪明 [20%] | 4h | 124 |  |  |
| 79 | 3.3.9 | UML基础Ⅳ制作PPT | manual | 3h | 2017-12-02 08:00 | 2017-12-02 11:00 | 78 |  | 戴恺铖 [20%]; 朱赛奎 [20%]; 陈潮鸣 [20%]; 周骏迪 [20%]; 陈豪明 [20%] | 3h | 93 |  |  |
| 80 | 3.3.10 | 为每个分配标识 | manual | 1h | 2017-12-01 08:00 | 2017-12-01 09:00 | 77 |  | 戴恺铖 [10%]; 朱赛奎 [10%]; 陈潮鸣 [10%]; 周骏迪 [60%]; 陈豪明 [10%] | 1h | 31 | 周骏迪 | 戴恺铖、陈潮鸣、陈豪明、朱赛奎 |
| 81 | 3.3.11 | 第九周第二次会议 | manual | 1h | 2017-12-03 08:00 | 2017-12-03 09:00 | 79 |  | 戴恺铖 [20%]; 朱赛奎 [20%]; 陈潮鸣 [20%]; 周骏迪 [20%]; 陈豪明 [20%] | 1h | 31 |  |  |
| 82 | 3.3.12 | 识别需求源头 | manual | 2h | 2017-12-04 08:00 | 2017-12-04 10:00 | 81 |  | 戴恺铖 [10%]; 朱赛奎 [10%]; 陈潮鸣 [10%]; 周骏迪 [60%]; 陈豪明 [10%] | 2h | 62 | 周骏迪 | 戴恺铖、陈潮鸣、陈豪明、朱赛奎 |
| 83 | 3.3.13 | 第十周第一次会议 | manual | 1h | 2017-12-07 08:00 | 2017-12-07 09:00 | 82 |  | 戴恺铖 [20%]; 朱赛奎 [20%]; 陈潮鸣 [20%]; 周骏迪 [20%]; 陈豪明 [20%] | 1h | 31 |  |  |
| 84 | 3.3.14 | 《需求规格说明书》完善 | manual | 8h | 2017-12-07 09:00 | 2017-12-08 09:00 | 83 |  | 戴恺铖 [20%]; 朱赛奎 [20%]; 陈潮鸣 [20%]; 周骏迪 [20%]; 陈豪明 [20%] | 8h | 248 |  |  |
| 85 | 3.3.15 | 《需求规格说明书》V1.0提交 | milestone, manual | 0h | 2017-12-10 08:00 | 2017-12-10 08:00 | 84 |  |  |  |  | 戴恺铖 | 周骏迪 |
| 86 | 3.3.16 | 第十周第二次会议 | manual | 1h | 2017-12-10 08:00 | 2017-12-10 09:00 | 85 |  | 戴恺铖 [20%]; 朱赛奎 [20%]; 陈潮鸣 [20%]; 周骏迪 [20%]; 陈豪明 [20%] | 1h | 31 |  |  |

| ID | WBS | Task | Type | Duration | Start | Finish | Predecessors | Total slack | Constraint | Resources | Work | Cost | 负责人 | 相关人员 |
| --- | --- | --- | --- | --- | --- | --- | --- | --- | --- | --- | --- | --- | --- | --- |
| 87 | 3.4 | **需求规格审核** |  | 4.5d | 2017-12-14 08:00 | 2017-12-18 12:00 | 70 | 0d |  |  | 22h | 682 | 朱赛奎 | 戴恺铖、陈潮鸣、陈豪明、周骏迪 |
| 88 | 3.4.1 | 《需求规格说明书》接受评审 | milestone, manual | 0h | 2017-12-14 08:00 | 2017-12-14 08:00 | 85 |  |  |  |  |  |  |  |
| 89 | 3.4.2 | 第十一周第一次会议 | manual | 1h | 2017-12-14 08:00 | 2017-12-14 09:00 | 88 |  |  | 戴恺铖 [20%]; 朱赛奎 [20%]; 陈潮鸣 [20%]; 周骏迪 [20%]; 陈豪明 [20%] | 1h | 31 |  |  |
| 90 | 3.4.3 | 评审需求 | manual | 4h | 2017-12-15 08:00 | 2017-12-15 12:00 | 89 |  |  | 戴恺铖 [10%]; 朱赛奎 [60%]; 陈潮鸣 [10%]; 周骏迪 [10%]; 陈豪明 [10%] | 4h | 124 | 朱赛奎 | 戴恺铖、陈潮鸣、陈豪明、周骏迪 |
| 91 | 3.4.4 | 测试需求 | manual | 4h | 2017-12-15 08:00 | 2017-12-15 12:00 | 89 |  |  | 戴恺铖 [10%]; 朱赛奎 [60%]; 陈潮鸣 [10%]; 周骏迪 [10%]; 陈豪明 [10%] | 4h | 124 | 朱赛奎 | 戴恺铖、陈潮鸣、陈豪明、周骏迪 |
| 92 | 3.4.5 | 《需求规格说明书》修改 | manual | 4h | 2017-12-16 08:00 | 2017-12-16 12:00 | 89 |  |  | 戴恺铖 [20%]; 朱赛奎 [20%]; 陈潮鸣 [20%]; 周骏迪 [20%]; 陈豪明 [20%] | 4h | 124 |  |  |
| 93 | 3.4.6 | 第十一周第二次会议 | manual | 1h | 2017-12-17 08:00 | 2017-12-17 09:00 | 92 |  |  | 戴恺铖 [20%]; 朱赛奎 [20%]; 陈潮鸣 [20%]; 周骏迪 [20%]; 陈豪明 [20%] | 1h | 31 |  |  |
| 94 | 3.4.7 | 《需求规格说明书》V2.0提交 | milestone, manual | 0h | 2017-12-18 08:00 | 2017-12-18 08:00 | 93 |  |  |  |  |  |  |  |
| 95 | 3.4.8 | 模拟需求 | manual | 4h | 2017-12-18 08:00 | 2017-12-18 12:00 | 93 |  |  | 戴恺铖 [10%]; 朱赛奎 [60%]; 陈潮鸣 [10%]; 周骏迪 [10%]; 陈豪明 [10%] | 4h | 124 | 朱赛奎 | 戴恺铖、陈潮鸣、陈豪明、周骏迪 |
| 96 | 3.4.9 | 定义验收条件 | manual | 4h | 2017-12-18 08:00 | 2017-12-18 12:00 | 93 |  |  | 戴恺铖 [10%]; 朱赛奎 [60%]; 陈潮鸣 [10%]; 周骏迪 [10%]; 陈豪明 [10%] | 4h | 124 | 朱赛奎 | 戴恺铖、陈潮鸣、陈豪明、周骏迪 |
| 97 | 4 | **项目管理过程** |  | 20d | 2017-12-18 08:00 | 2018-01-07 08:00 | 27 | 0d |  |  | 81.2h | 2,517.2 | 陈豪明 | 戴恺铖、陈潮鸣、朱赛奎、周骏迪 |
| 98 | 4.1 | 《软件需求变更文档》V0.1 | manual | 4h | 2017-12-18 08:00 | 2017-12-18 12:00 | 93 |  |  | 戴恺铖 [10%]; 朱赛奎 [10%]; 陈潮鸣 [10%]; 周骏迪 [10%]; 陈豪明 [60%] | 4h | 124 |  |  |
| 99 | 4.2 | 第十二周第一次会议 | manual | 1h | 2017-12-21 08:00 | 2017-12-21 09:00 | 92 |  |  | 戴恺铖 [20%]; 朱赛奎 [20%]; 陈潮鸣 [20%]; 周骏迪 [20%]; 陈豪明 [20%] | 1h | 31 |  |  |
| 100 | 4.3 | 《软件需求变更文档》小组评审 | manual | 2h | 2017-12-22 08:00 | 2017-12-22 10:00 | 99 |  |  | 戴恺铖 [20%]; 朱赛奎 [20%]; 陈潮鸣 [20%]; 周骏迪 [20%]; 陈豪明 [20%] | 2h | 62 |  |  |
| 101 | 4.4 | 《软件需求变更文档》V0.X | manual | 4h | 2017-12-22 08:00 | 2017-12-22 12:00 | 99 |  |  | 戴恺铖 [20%]; 朱赛奎 [20%]; 陈潮鸣 [20%]; 周骏迪 [20%]; 陈豪明 [20%] | 4h | 124 |  |  |
| 102 | 4.5 | 建立变更控制流程 | manual | 2h | 2017-12-22 08:00 | 2017-12-22 10:00 | 99 |  | start no earlier than 2017-12-11 08:00 | 戴恺铖 [10%]; 朱赛奎 [10%]; 陈潮鸣 [10%]; 周骏迪 [10%]; 陈豪明 [60%] | 2h | 62 | 陈豪明 | 戴恺铖、陈潮鸣、朱赛奎、周骏迪 |
| 103 | 4.6 | 分析变更影响 | manual | 4h | 2017-12-22 08:00 | 2017-12-22 12:00 | 99 |  |  | 戴恺铖 [10%]; 朱赛奎 [10%]; 陈潮鸣 [10%]; 周骏迪 [10%]; 陈豪明 [60%] | 4h | 124 | 陈豪明 | 戴恺铖、陈潮鸣、朱赛奎、周骏迪 |
| 104 | 4.7 | 建立基线，管理需求版本 | manual | 2h | 2017-12-22 08:00 | 2017-12-22 10:00 | 99 |  |  | 戴恺铖 [10%]; 朱赛奎 [10%]; 陈潮鸣 [10%]; 周骏迪 [10%]; 陈豪明 [60%] | 2h | 62 | 陈豪明 | 戴恺铖、陈潮鸣、朱赛奎、周骏迪 |
| 105 | 4.8 | 《软件需求变更文档》修改 | manual | 1d | 2017-12-22 13:00 | 2017-12-23 12:00 | 101 |  |  | 戴恺铖 [20%]; 朱赛奎 [20%]; 陈潮鸣 [20%]; 周骏迪 [20%]; 陈豪明 [20%] | 8h | 248 |  |  |
| 106 | 4.9 | 《软件需求变更文档》V1.0提交 | milestone, manual | 0h | 2017-12-24 08:00 | 2017-12-24 08:00 | 105 |  |  |  |  |  | 戴恺铖 | 陈豪明 |
| 107 | 4.10 | 第十二周第二次会议 | manual | 1h | 2017-12-24 08:00 | 2017-12-24 09:00 | 106 |  |  | 戴恺铖 [20%]; 朱赛奎 [20%]; 陈潮鸣 [20%]; 周骏迪 [20%]; 陈豪明 [20%] | 1h | 31 |  |  |
| 108 | 4.11 | 使用需求管理工具 | manual | 2h | 2017-12-25 08:00 | 2017-12-25 10:00 | 107 |  |  | 戴恺铖 [20%]; 朱赛奎 [20%]; 陈潮鸣 [20%]; 周骏迪 [20%]; 陈豪明 [20%] | 2h | 62 |  |  |
| 109 | 4.12 | 维护变更历史 | manual | 1h | 2017-12-25 08:00 | 2017-12-25 09:00 | 107 |  |  | 戴恺铖 [20%]; 朱赛奎 [20%]; 陈潮鸣 [20%]; 周骏迪 [20%]; 陈豪明 [20%] | 1h | 31 |  |  |
| 110 | 4.13 | 《软件需求变更文档》修改 | manual | 4h | 2017-12-26 08:00 | 2017-12-26 12:00 | 107 |  |  | 戴恺铖 [20%]; 朱赛奎 [20%]; 陈潮鸣 [20%]; 周骏迪 [20%]; 陈豪明 [20%] | 4h | 124 |  |  |
| 111 | 4.14 | 《软件需求变更文档》接受评审 | milestone, manual | 0h | 2017-12-28 08:00 | 2017-12-28 08:00 | 110 |  |  |  |  |  | 戴恺铖 | 陈潮鸣、陈豪明、周骏迪、朱赛奎 |
| 112 | 4.15 | 第十三周第一次会议 | manual | 1h | 2017-12-29 08:00 | 2017-12-29 09:00 | 111 |  |  | 戴恺铖 [20%]; 朱赛奎 [20%]; 陈潮鸣 [20%]; 周骏迪 [20%]; 陈豪明 [20%] | 1h | 31 |  |  |
| 113 | 4.16 | 维护需求可跟踪矩阵 | manual | 4h | 2017-12-30 08:00 | 2017-12-30 12:00 | 112 |  |  | 戴恺铖 [20%]; 朱赛奎 [20%]; 陈潮鸣 [20%]; 周骏迪 [20%]; 陈豪明 [20%] | 4h | 124 |  |  |
| 114 | 4.17 | 跟踪需求问题 | manual | 4h | 2017-12-30 08:00 | 2017-12-30 12:00 | 112 |  |  | 戴恺铖 [20%]; 朱赛奎 [20%]; 陈潮鸣 [20%]; 周骏迪 [20%]; 陈豪明 [20%] | 4h | 124 |  |  |
| 115 | 4.18 | 维护需求问题 | manual | 2h | 2017-12-30 08:00 | 2017-12-30 10:00 | 112 |  |  | 戴恺铖 [20%]; 朱赛奎 [20%]; 陈潮鸣 [20%]; 周骏迪 [20%]; 陈豪明 [20%] | 2h | 62 |  |  |
| 116 | 4.19 | 《软件需求变更文档》完善 | manual | 4h | 2017-12-30 08:00 | 2017-12-30 12:00 | 112 |  |  | 戴恺铖 [20%]; 朱赛奎 [20%]; 陈潮鸣 [20%]; 周骏迪 [20%]; 陈豪明 [20%] | 4h | 124 |  |  |
| 117 | 4.20 | 第十三周第二次会议 | manual | 1h | 2017-12-31 08:00 | 2017-12-31 09:00 | 116 |  |  | 戴恺铖 [20%]; 朱赛奎 [20%]; 陈潮鸣 [20%]; 周骏迪 [20%]; 陈豪明 [20%] | 1h | 31 |  |  |
| 118 | 4.21 | 《软件需求变更文档》V2.0提交 | milestone, manual | 0h | 2018-01-01 08:00 | 2018-01-01 08:00 | 117 |  |  |  |  |  | 戴恺铖 | 陈豪明 |

| ID | WBS | Task | Type | Duration | Start | Finish | Predecessors | Total slack | Constraint | Resources | Work | Cost | 负责人 | 相关人员 |
| --- | --- | --- | --- | --- | --- | --- | --- | --- | --- | --- | --- | --- | --- | --- |
| 119 | 4.22 | **软件概要设计** |  | 6d | 2018-01-01 08:00 | 2018-01-07 08:00 | 117 | 0d |  |  | 15h | 465 | 戴恺铖 |  |
| 120 | 4.22.1 | 《软件概要设计说明书》V0.1 | manual | 4h | 2018-01-01 08:00 | 2018-01-01 12:00 | 117 |  |  | 戴恺铖 [20%]; 朱赛奎 [20%]; 陈潮鸣 [20%]; 周骏迪 [20%]; 陈豪明 [20%] | 4h | 124 |  |  |
| 121 | 4.22.2 | 《软件概要设计说明书》小组评审 | manual | 2h | 2018-01-02 08:48 | 2018-01-02 10:48 | 120 |  |  | 戴恺铖 [20%]; 朱赛奎 [20%]; 陈潮鸣 [20%]; 周骏迪 [20%]; 陈豪明 [20%] | 2h | 62 |  |  |
| 122 | 4.22.3 | 《软件概要设计说明书》V0.X | manual | 4h | 2018-01-03 08:48 | 2018-01-03 13:48 | 121 |  |  | 戴恺铖 [20%]; 朱赛奎 [20%]; 陈潮鸣 [20%]; 周骏迪 [20%]; 陈豪明 [20%] | 4h | 124 | 戴恺铖 |  |
| 123 | 4.22.4 | 第十四周第一次会议 | manual | 1h | 2018-01-04 08:48 | 2018-01-04 09:48 | 122 |  |  | 戴恺铖 [20%]; 朱赛奎 [20%]; 陈潮鸣 [20%]; 周骏迪 [20%]; 陈豪明 [20%] | 1h | 31 |  |  |
| 124 | 4.22.5 | 《软件概要设计说明书》完善 | manual | 4h | 2018-01-05 08:00 | 2018-01-05 12:00 | 123 |  |  | 戴恺铖 [40%]; 朱赛奎; 陈潮鸣 [60%]; 周骏迪; 陈豪明 | 4h | 124 | 陈潮鸣 | 戴恺铖 |
| 125 | 4.22.6 | 《软件概要设计说明书》提交 | milestone, manual | 0h | 2018-01-07 08:00 | 2018-01-07 08:00 | 124 |  |  |  |  |  | 戴恺铖 | 陈潮鸣、陈豪明、周骏迪、朱赛奎 |
| 126 | 4.23 | UML与设计模式了解 | manual | 4h | 2018-01-05 08:00 | 2018-01-05 12:00 | 123 |  | start no earlier than 2018-01-06 08:00 | 戴恺铖 [50%]; 朱赛奎 [20%]; 陈潮鸣 [30%]; 周骏迪; 陈豪明 | 4h | 124 |  |  |
| 127 | 4.24 | UML与数据库设计了解 | manual | 4h | 2018-01-05 08:00 | 2018-01-05 12:00 | 123 |  |  | 戴恺铖 [20%]; 朱赛奎; 陈潮鸣 [50%]; 周骏迪 [10%]; 陈豪明 | 3.2h | 99.2 | 陈潮鸣 | 戴恺铖、陈豪明、朱赛奎、周骏迪 |
| 128 | 4.25 | UML与体系架构设计了解 | manual | 4h | 2018-01-05 08:00 | 2018-01-05 12:00 | 123 |  |  | 戴恺铖; 朱赛奎; 陈潮鸣 [20%]; 周骏迪 [30%]; 陈豪明 [50%] | 4h | 124 | 陈豪明 | 戴恺铖、陈潮鸣、朱赛奎、周骏迪 |
| 129 | 4.26 | UML与设计模式、数据库设计、体系架构设计关系PPT制作 | manual | 3h | 2018-01-04 09:48 | 2018-01-04 13:48 | 123 |  |  | 戴恺铖 [20%]; 朱赛奎 [20%]; 陈潮鸣 [20%]; 周骏迪 [20%]; 陈豪明 [20%] | 3h | 93 | 朱赛奎、周骏迪 | 戴恺铖、陈潮鸣、陈豪明 |
| 130 | 4.27 | 第十四周第二次会议 | manual | 1h | 2018-01-06 09:48 | 2018-01-06 10:48 | 129 |  |  | 戴恺铖 [20%]; 朱赛奎 [20%]; 陈潮鸣 [20%]; 周骏迪 [20%]; 陈豪明 [20%] | 1h | 31 |  | 陈潮鸣、陈豪明、周骏迪、朱赛奎 |
| 131 | 5 | **项目收尾** |  | 5d | 2018-01-08 08:00 | 2018-01-12 17:00 | 97 | 0d |  |  | 25h | 775 | 戴恺铖 | 陈潮鸣、陈豪明、周骏迪、朱赛奎 |
| 132 | 5.1 | 各文档审查 | manual | 8h | 2018-01-08 08:00 | 2018-01-08 17:00 | 130 |  |  | 戴恺铖 [20%]; 朱赛奎 [20%]; 陈潮鸣 [20%]; 周骏迪 [20%]; 陈豪明 [20%] | 8h | 248 | 陈潮鸣、陈豪明 | 戴恺铖、朱赛奎、周骏迪 |
| 133 | 5.2 | 整理文档 | manual | 1d | 2018-01-08 08:00 | 2018-01-08 17:00 | 130 |  |  | 戴恺铖 [20%]; 朱赛奎 [20%]; 陈潮鸣 [20%]; 周骏迪 [20%]; 陈豪明 [20%] | 8h | 248 | 朱赛奎、周骏迪 | 戴恺铖、陈潮鸣、陈豪明 |
| 134 | 5.3 | 第十五周第一次会议 | manual | 1h | 2018-01-11 08:00 | 2018-01-11 09:00 | 133 |  |  | 戴恺铖 [20%]; 朱赛奎 [20%]; 陈潮鸣 [20%]; 周骏迪 [20%]; 陈豪明 [20%] | 1h | 31 |  |  |
| 135 | 5.4 | 项目总结 | manual | 8h | 2018-01-12 08:00 | 2018-01-12 17:00 | 134 |  |  | 戴恺铖 [20%]; 朱赛奎 [20%]; 陈潮鸣 [20%]; 周骏迪 [20%]; 陈豪明 [20%] | 8h | 248 | 戴恺铖 |  |
