# 项目WBS-v0.2

Schedule from MS Project, 2017-09-28 to 2018-01-12, costs in ¥, A marks actual dates.

## Calendars

- 标准: Mon-Sun 08:00-12:00, 13:00-17:00. Exceptions (off unless hours are given): 2017-11-05 08:00-12:00, 13:00-17:00.

## Resources

| Resource | Rate |
| --- | --- |
| 戴恺铖 | 31 |
| 朱赛奎 | 31 |
| 陈潮鸣 | 31 |
| 周骏迪 | 31 |
| 陈豪明 | 31 |

## Schedule

| ID | WBS | Task | Type | Duration | Start | Finish | Predecessors | Complete | Constraint | Resources | Work | Actual work | Cost | Actual cost | 负责人 | 相关人员 |
| --- | --- | --- | --- | --- | --- | --- | --- | --- | --- | --- | --- | --- | --- | --- | --- | --- |
| 1 | 1 | **项目准备** |  | 25.12d | 2017-09-28 09:00 A | 2017-10-23 10:00 A |  | 100% |  |  | 22h | 22h | 682 | 682 |  |  |
| 2 | 1.1 | 项目小组成立 | manual | 2h | 2017-09-28 09:00 A | 2017-09-28 11:00 A |  | 100% |  |  |  |  |  |  | 戴恺铖 | 陈潮鸣、陈豪明、朱赛奎、周骏迪 |
| 3 | 1.2 | Git培训 | manual | 2h | 2017-10-04 08:00 A | 2017-10-04 10:00 A | 2 | 100% |  | 陈豪明 [80%]; 戴恺铖 [5%]; 朱赛奎 [5%]; 周骏迪 [5%]; 陈潮鸣 [5%] | 2h | 2h | 62 | 62 | 陈豪明 | 陈潮鸣、戴恺铖、朱赛奎、周骏迪 |
| 4 | 1.3 | 软件配置统一安装 | manual | 1h | 2017-10-06 08:00 A | 2017-10-06 09:00 A | 2 | 100% |  | 陈豪明 [80%]; 戴恺铖 [5%]; 朱赛奎 [5%]; 周骏迪 [5%]; 陈潮鸣 [5%] | 1h | 1h | 31 | 31 | 陈豪明 | 陈潮鸣、陈豪明、朱赛奎、周骏迪 |
| 5 | 1.4 | 文档模板搜集 | manual | 2h | 2017-10-06 08:00 A | 2017-10-06 10:00 A | 2 | 100% |  | 戴恺铖 [20%]; 陈豪明 [20%]; 朱赛奎 [20%]; 陈潮鸣 [20%]; 周骏迪 [20%] | 2h | 2h | 62 | 62 |  |  |
| 6 | 1.5 | logo设计 | manual | 2h | 2017-10-07 08:00 A | 2017-10-07 10:00 A | 2 | 100% |  | 戴恺铖 [50%]; 陈豪明 [50%] | 2h | 2h | 62 | 62 | 戴恺铖 | 陈豪明 |
| 7 | 1.6 | 可行性分析V1.0 | milestone, manual | 8h | 2017-10-12 09:00 A | 2017-10-13 09:00 A |  | 100% |  | 戴恺铖 [20%]; 陈豪明 [20%]; 朱赛奎 [20%]; 陈潮鸣 [20%]; 周骏迪 [20%] | 8h | 8h | 248 | 248 | 戴恺铖 | 陈潮鸣、陈豪明、朱赛奎、周骏迪 |
| 8 | 1.7 | 项目章程 | milestone, manual | 2h | 2017-10-23 08:00 A | 2017-10-23 10:00 A |  | 100% | finish no earlier than 2017-10-22 18:00 | 戴恺铖 [20%]; 陈豪明 [20%]; 朱赛奎 [20%]; 陈潮鸣 [20%]; 周骏迪 [20%] | 2h | 2h | 62 | 62 | 戴恺铖 | 陈潮鸣、陈豪明、朱赛奎、周骏迪 |
| 9 | 1.8 | 第二周第一次例会 | manual | 1h | 2017-10-12 08:00 A | 2017-10-12 09:00 A |  | 100% |  | 戴恺铖 [20%]; 陈豪明 [20%]; 朱赛奎 [20%]; 陈潮鸣 [20%]; 周骏迪 [20%] | 1h | 1h | 31 | 31 |  |  |
| 10 | 1.9 | 第二周第二次例会 | manual | 1h | 2017-10-15 08:00 A | 2017-10-15 09:00 A | 9 | 100% |  | 戴恺铖 [20%]; 陈豪明 [20%]; 朱赛奎 [20%]; 陈潮鸣 [20%]; 周骏迪 [20%] | 1h | 1h | 31 | 31 |  |  |
| 11 | 1.10 | 第三周第一次例会 | manual | 1h | 2017-10-16 08:00 A | 2017-10-16 09:00 A | 10 | 100% |  | 戴恺铖 [20%]; 陈豪明 [20%]; 朱赛奎 [20%]; 陈潮鸣 [20%]; 周骏迪 [20%] | 1h | 1h | 31 | 31 |  |  |
| 12 | 1.11 | 第三周第二次例会 | manual | 1h | 2017-10-20 08:00 A | 2017-10-20 09:00 A | 11 | 100% |  | 戴恺铖 [20%]; 陈豪明 [20%]; 朱赛奎 [20%]; 陈潮鸣 [20%]; 周骏迪 [20%] | 1h | 1h | 31 | 31 |  |  |
| 13 | 1.12 | 第三周第三次例会 | manual | 1h | 2017-10-22 08:00 A | 2017-10-22 09:00 A | 12 | 100% |  | 戴恺铖 [20%]; 陈豪明 [20%]; 朱赛奎 [20%]; 陈潮鸣 [20%]; 周骏迪 [20%] | 1h | 1h | 31 | 31 |  |  |
| 14 | 2 | **项目计划** |  | 6.38d | 2017-10-23 08:00 A | 2017-10-29 11:00 A | 1 | 100% |  |  | 24.2h | 24.2h | 750.2 | 750.2 | 戴恺铖 | 陈潮鸣、陈豪明、周骏迪、朱赛奎 |
| 15 | 2.1 | 《需求工程计划》模板搜集 | manual | 1h | 2017-10-23 08:00 A | 2017-10-23 09:00 A | 13 | 100% |  | 戴恺铖 [20%]; 朱赛奎 [20%]; 陈潮鸣 [20%]; 周骏迪 [20%]; 陈豪明 [20%] | 1h | 1h | 31 | 31 | 朱赛奎 | 周骏迪 |
| 16 | 2.2 | 第四周第一次例会 | manual | 1h | 2017-10-25 08:00 A | 2017-10-25 09:00 A | 15 | 100% |  | 戴恺铖 [20%]; 朱赛奎 [20%]; 陈潮鸣 [20%]; 周骏迪 [20%]; 陈豪明 [20%] | 1h | 1h | 31 | 31 |  | 陈潮鸣、陈豪明、周骏迪、朱赛奎 |
| 17 | 2.3 | 项目各阶段负责人确定 | manual | 1h | 2017-10-25 08:48 A | 2017-10-25 09:48 A | 16 | 100% |  | 戴恺铖 [20%]; 朱赛奎 [20%]; 陈潮鸣 [20%]; 周骏迪 [20%]; 陈豪明 [20%] | 1h | 1h | 31 | 31 |  |  |
| 18 | 2.4 | UML画图工具确认 | manual | 2h | 2017-10-26 08:48 A | 2017-10-26 10:48 A | 16 | 100% |  | 戴恺铖 [20%]; 朱赛奎 [20%]; 陈潮鸣 [20%]; 周骏迪 [20%]; 陈豪明 [20%] | 2h | 2h | 62 | 62 |  |  |
| 19 | 2.5 | 初步了解UML | manual | 5h | 2017-10-27 08:00 A | 2017-10-27 14:00 A | 16 | 100% |  | 戴恺铖 [20%]; 朱赛奎 [20%]; 陈潮鸣 [20%]; 周骏迪 [20%]; 陈豪明 [20%] | 5h | 5h | 155 | 155 | 戴恺铖 | 陈潮鸣、陈豪明、周骏迪、朱赛奎 |
| 20 | 2.6 | UML概述PPT制作 | manual | 1h | 2017-10-28 08:00 A | 2017-10-28 09:00 A | 19 | 100% |  | 朱赛奎 [5%]; 陈潮鸣 [85%]; 陈豪明 [10%] | 0.6h | 0.6h | 18.6 | 18.6 | 陈潮鸣 | 朱赛奎、陈豪明 |
| 21 | 2.7 | 第四周第二次例会 | manual | 1h | 2017-10-28 13:00 A | 2017-10-28 14:00 A | 20 | 100% |  | 朱赛奎 [20%]; 陈潮鸣 [20%]; 陈豪明 [20%]; 戴恺铖 [20%]; 周骏迪 [20%] | 1h | 1h | 31 | 31 |  |  |
| 22 | 2.8 | 《需求工程计划》文档编写 | manual | 3h | 2017-10-28 14:00 A | 2017-10-28 17:00 A | 21 | 100% |  | 戴恺铖 [5%]; 朱赛奎 [40%]; 陈潮鸣 [10%]; 周骏迪 [40%]; 陈豪明 [5%] | 3h | 3h | 93 | 93 | 朱赛奎、周骏迪 |  |
| 23 | 2.9 | 《需求工程计划》甘特图 | manual | 6h | 2017-10-28 13:48 A | 2017-10-29 10:48 A | 21 | 100% |  | 戴恺铖 [30%]; 朱赛奎 [10%]; 陈潮鸣; 周骏迪; 陈豪明 [70%] | 6.6h | 6.6h | 204.6 | 204.6 | 戴恺铖、陈豪明 |  |
| 24 | 2.10 | 《需求工程计划》V1.0 | manual | 2h | 2017-10-29 08:00 A | 2017-10-29 10:00 A | 22 | 100% |  | 戴恺铖 [50%]; 朱赛奎 [10%]; 陈潮鸣 [30%]; 周骏迪 [10%]; 陈豪明 | 2h | 2h | 62 | 62 | 朱赛奎、周骏迪 |  |
| 25 | 2.11 | 第四周第三次例会 | manual | 1h | 2017-10-29 10:00 A | 2017-10-29 11:00 A | 24 | 100% |  | 戴恺铖 [20%]; 朱赛奎 [20%]; 陈潮鸣 [20%]; 周骏迪 [20%]; 陈豪明 [20%] | 1h | 1h | 31 | 31 | 戴恺铖 | 陈潮鸣、陈豪明、周骏迪、朱赛奎 |
| 26 | 2.12 | 《需求工程计划-初步》提交 | milestone, manual | 0h | 2017-10-29 11:00 A | 2017-10-29 11:00 A | 25 | 100% |  |  |  |  |  |  | 戴恺铖 |  |

| ID | WBS | Task | Type | Duration | Start | Finish | Predecessors | Complete | Remaining | Total slack | Resources | Work | Actual work | Cost | Actual cost | 负责人 | 相关人员 |
| --- | --- | --- | --- | --- | --- | --- | --- | --- | --- | --- | --- | --- | --- | --- | --- | --- | --- |
| 27 | 3 | **项目实施** |  | 47.5d | 2017-11-01 08:00 A | 2017-12-18 12:00 |  | 87% | 6.26d | 0d |  | 156.55h | 134.55h | 4,853.05 | 4,171.05 |  |  |
| 28 | 3.1 | **需求获取** |  | 20.38d | 2017-11-01 08:00 A | 2017-11-21 11:00 A | 14 | 100% |  |  |  | 81.55h | 81.55h | 2,528.05 | 2,528.05 | 戴恺铖 | 陈潮鸣、陈豪明、周骏迪、朱赛奎 |
| 29 | 3.1.1 | 《需求工程计划》甘特图完善 | manual | 6h | 2017-11-02 08:00 A | 2017-11-02 15:00 A | 26 | 100% |  |  | 戴恺铖 [30%]; 朱赛奎 [10%]; 陈潮鸣; 周骏迪; 陈豪明 [70%] | 6.6h | 6.6h | 204.6 | 204.6 | 戴恺铖、陈豪明 |  |
| 30 | 3.1.2 | 《需求工程计划-初步》ppt制作 | milestone, manual | 0h | 2017-11-01 08:00 A | 2017-11-01 08:00 A | 26 | 100% |  |  | 戴恺铖 [5%]; 朱赛奎 [40%]; 陈潮鸣 [10%]; 周骏迪 [40%]; 陈豪明 [5%] |  |  |  |  | 朱赛奎、周骏迪 |  |
| 31 | 3.1.3 | 第五周第一次例会 | manual | 1h | 2017-11-02 08:00 A | 2017-11-02 09:00 A | 26 | 100% |  |  | 戴恺铖 [20%]; 朱赛奎 [20%]; 陈潮鸣 [20%]; 周骏迪 [20%]; 陈豪明 [20%] | 1h | 1h | 31 | 31 | 戴恺铖 | 陈潮鸣、陈豪明、周骏迪、朱赛奎 |
| 32 | 3.1.4 | UML工具:RationalRose 学习 | manual | 4h | 2017-11-03 08:00 A | 2017-11-03 12:00 A | 31 | 100% |  |  | 戴恺铖 [10%]; 朱赛奎 [30%]; 陈潮鸣 [10%]; 周骏迪 [40%]; 陈豪明 [10%] | 4h | 4h | 124 | 124 |  |  |
| 33 | 3.1.5 | RationalRose心得PPT制作 | manual | 2h | 2017-11-04 08:00 A | 2017-11-04 10:00 A | 32 | 100% |  |  | 戴恺铖 [10%]; 朱赛奎 [40%]; 陈潮鸣 [5%]; 周骏迪 [40%]; 陈豪明 [5%] | 2h | 2h | 62 | 62 | 周骏迪 | 陈潮鸣、陈豪明、戴恺铖、朱赛奎 |
| 34 | 3.1.6 | 《需求工程计划》完善 | manual | 2h | 2017-11-03 08:00 A | 2017-11-03 10:00 A | 31 | 100% |  |  | 戴恺铖 [20%]; 朱赛奎 [20%]; 陈潮鸣 [20%]; 周骏迪 [20%]; 陈豪明 [20%] | 2h | 2h | 62 | 62 | 周骏迪、朱赛奎 | 戴恺铖、陈潮鸣、陈豪明 |
| 35 | 3.1.7 | 《需求工程计划》V1.0编写 | manual | 4h | 2017-11-03 13:48 A | 2017-11-04 08:48 A | 34 | 100% |  |  | 戴恺铖 [10%]; 朱赛奎 [35%]; 陈潮鸣 [10%]; 周骏迪 [35%]; 陈豪明 [10%] | 4h | 4h | 124 | 124 | 周骏迪、朱赛奎 | 戴恺铖、陈潮鸣、陈豪明 |
| 36 | 3.1.8 | 第五周第二次例会 | manual | 1h | 2017-11-05 08:00 A | 2017-11-05 09:00 A | 35 | 100% |  |  | 戴恺铖 [20%]; 朱赛奎 [20%]; 陈潮鸣 [20%]; 周骏迪 [20%]; 陈豪明 [20%] | 1h | 1h | 31 | 31 |  |  |
| 37 | 3.1.9 | 《需求工程计划》V1.0提交 | milestone, manual | 0h | 2017-11-05 09:00 A | 2017-11-05 09:00 A | 36 | 100% |  |  |  |  |  |  |  | 戴恺铖 |  |
| 38 | 3.1.10 | 定义愿景和范围 | manual | 2h | 2017-11-06 08:00 A | 2017-11-06 10:00 A | 36 | 100% |  |  | 戴恺铖 [60%]; 朱赛奎 [10%]; 陈潮鸣 [10%]; 周骏迪 [10%]; 陈豪明 [10%] | 2h | 2h | 62 | 62 |  |  |
| 39 | 3.1.11 | 识别用户群 | manual | 2h | 2017-11-06 08:00 A | 2017-11-06 10:00 A | 38 | 100% |  |  | 戴恺铖 [60%]; 朱赛奎 [10%]; 陈潮鸣 [10%]; 周骏迪 [10%]; 陈豪明 [10%] | 2h | 2h | 62 | 62 |  |  |
| 40 | 3.1.12 | 第一次需求获取访谈 | manual | 2h | 2017-11-06 08:00 A | 2017-11-06 10:00 A | 39 | 100% |  |  | 戴恺铖 [60%]; 朱赛奎 [10%]; 陈潮鸣 [10%]; 周骏迪 [10%]; 陈豪明 [10%] | 2h | 2h | 62 | 62 |  |  |
| 41 | 3.1.13 | 第六周第一次例会 | manual | 1h | 2017-11-09 08:00 A | 2017-11-09 09:00 A | 37 | 100% |  |  | 戴恺铖 [20%]; 朱赛奎 [20%]; 陈潮鸣 [20%]; 周骏迪 [20%]; 陈豪明 [20%] | 1h | 1h | 31 | 31 |  |  |
| 42 | 3.1.14 | StarUML心得PPT制作 | manual | 3h | 2017-11-10 08:00 A | 2017-11-10 11:00 A | 41 | 100% |  |  | 戴恺铖 [60%]; 周骏迪 [40%] | 3h | 3h | 93 | 93 |  |  |
| 43 | 3.1.15 | UML工具学习PPT评审 | milestone, manual | 0h | 2017-11-11 08:00 A | 2017-11-11 08:00 A | 42 | 100% |  |  |  |  |  |  |  |  |  |
| 44 | 3.1.16 | 修改《需求工程计划》 | manual | 2h | 2017-11-11 08:00 A | 2017-11-11 10:00 A | 41 | 100% |  |  | 戴恺铖 [20%]; 朱赛奎 [20%]; 陈潮鸣 [20%]; 周骏迪 [20%]; 陈豪明 [20%] | 2h | 2h | 62 | 62 | 朱赛奎、周骏迪 | 戴恺铖、陈潮鸣、陈豪明 |
| 45 | 3.1.17 | UML基础Ⅰ学习(用例图、类图、状态图、顺序图、协作图、部署图) | manual | 2h | 2017-11-12 08:00 A | 2017-11-12 10:00 A | 41 | 100% |  |  |  |  |  |  |  | 周骏迪 | 陈潮鸣 |
| 46 | 3.1.18 | UML基础Ⅰ心得PPT制作 | manual | 6h | 2017-11-12 08:00 A | 2017-11-12 15:00 A | 45 | 100% |  |  |  |  |  |  |  | 周骏迪 | 陈潮鸣 |
| 47 | 3.1.19 | 《需求工程计划》V2.0提交 | milestone, manual | 0h | 2017-11-12 08:00 A | 2017-11-12 08:00 A | 44 | 100% |  |  |  |  |  |  |  | 戴恺铖 |  |
| 48 | 3.1.20 | 第六周第二次例会 | manual | 1h | 2017-11-13 08:00 A | 2017-11-13 09:00 A | 47, 45 | 100% |  |  | 戴恺铖 [20%]; 朱赛奎 [20%]; 陈潮鸣 [20%]; 周骏迪 [20%]; 陈豪明 [20%] | 1h | 1h | 31 | 31 |  |  |
| 49 | 3.1.21 | 定义愿景和范围-第二次 | manual | 4h | 2017-11-13 09:00 A | 2017-11-13 14:00 A | 48 | 100% |  |  | 戴恺铖 | 4h | 4h | 124 | 124 |  |  |
| 50 | 3.1.22 | 组织焦点小组 | manual | 2h | 2017-11-14 08:00 A | 2017-11-14 10:00 A | 48 | 100% |  |  | 戴恺铖 [60%]; 朱赛奎 [10%]; 陈潮鸣 [10%]; 周骏迪 [10%]; 陈豪明 [10%] | 2h | 2h | 62 | 62 |  |  |
| 51 | 3.1.23 | 识别系统事件和响应 | manual | 2h | 2017-11-14 10:00 A | 2017-11-14 12:00 A | 50 | 100% |  |  | 戴恺铖 [60%]; 朱赛奎 [10%]; 陈潮鸣 [10%]; 周骏迪 [10%]; 陈豪明 [10%] | 2h | 2h | 62 | 62 |  |  |
| 52 | 3.1.24 | 选择产品代言人 | manual | 2h | 2017-11-14 13:00 A | 2017-11-14 15:00 A | 51 | 100% |  |  | 戴恺铖 [60%]; 朱赛奎 [10%]; 陈潮鸣 [10%]; 周骏迪 [10%]; 陈豪明 [10%] | 2h | 2h | 62 | 62 |  |  |
| 53 | 3.1.25 | 识别用户需求 | manual | 2h | 2017-11-14 15:00 A | 2017-11-14 17:00 A | 52 | 100% |  |  | 戴恺铖 [60%]; 朱赛奎 [10%]; 陈潮鸣 [10%]; 周骏迪 [10%]; 陈豪明 [10%] | 2h | 2h | 62 | 62 |  |  |
| 54 | 3.1.26 | 界面原型初型 | manual | 6h | 2017-11-15 08:00 A | 2017-11-15 15:00 A | 53 | 100% |  |  | 戴恺铖 [5%]; 朱赛奎 [5%]; 陈潮鸣 [80%]; 周骏迪 [5%]; 陈豪明 [5%] | 6h | 6h | 186 | 186 |  |  |
| 55 | 3.1.27 | UMLⅠ PPT评审 | milestone, manual | 0h | 2017-11-16 08:00 A | 2017-11-16 08:00 A | 46 | 100% |  |  |  |  |  |  |  |  |  |
| 56 | 3.1.28 | 第二次需求获取访谈 | manual | 1h | 2017-11-16 08:00 A | 2017-11-16 09:00 A | 54 | 100% |  |  | 戴恺铖 [20%]; 朱赛奎 [20%]; 陈潮鸣 [20%]; 周骏迪 [20%]; 陈豪明 [20%] | 1h | 1h | 31 | 31 |  |  |
| 57 | 3.1.29 | 第七周第一次例会 | manual | 1h | 2017-11-16 09:00 A | 2017-11-16 10:00 A | 56, 55 | 100% |  |  | 戴恺铖 [20%]; 朱赛奎 [20%]; 陈潮鸣 [20%]; 周骏迪 [20%]; 陈豪明 [20%] | 1h | 1h | 31 | 31 |  |  |
| 58 | 3.1.30 | 举行引导式需求获取讨论会 | manual | 2h | 2017-11-16 10:00 A | 2017-11-16 12:00 A | 57 | 100% |  |  | 戴恺铖 [20%]; 朱赛奎 [20%]; 陈潮鸣 [20%]; 周骏迪 [20%]; 陈豪明 [20%] | 2h | 2h | 62 | 62 |  |  |
| 59 | 3.1.31 | 界面原型出题 | manual | 7h | 2017-11-18 08:00 A | 2017-11-18 16:00 A | 57 | 100% |  |  | 戴恺铖 [50%]; 周骏迪 [50%] | 7h | 7h | 217 | 217 |  |  |
| 60 | 3.1.32 | 软件需求第四章出题 | manual | 5h | 2017-11-18 08:00 A | 2017-11-18 14:00 A | 57 | 100% |  |  | 陈豪明 [50%]; 朱赛奎 [50%] | 5h | 5h | 155 | 155 |  |  |
| 61 | 3.1.33 | UML界面原型了解 | manual | 2h | 2017-11-18 08:00 A | 2017-11-18 10:00 A | 57 | 100% |  |  | 戴恺铖 [20%]; 朱赛奎 [30%]; 陈潮鸣 [10%]; 周骏迪 [20%]; 陈豪明 [20%] | 2h | 2h | 62 | 62 | 朱赛奎 | 戴恺铖、陈潮鸣、陈豪明、周骏迪 |
| 62 | 3.1.34 | UML界面原型PPT制作 | manual | 7h | 2017-11-18 10:00 A | 2017-11-19 09:00 A | 61 | 100% |  |  | 戴恺铖 [5%]; 陈潮鸣 [90%]; 周骏迪 [5%] | 5.95h | 5.95h | 184.45 | 184.45 | 朱赛奎 | 戴恺铖、陈潮鸣、陈豪明、周骏迪 |
| 63 | 3.1.35 | 第七周第二次例会 | manual | 1h | 2017-11-19 09:00 A | 2017-11-19 10:00 A | 62, 59, 60 | 100% |  |  | 戴恺铖 [20%]; 朱赛奎 [20%]; 陈潮鸣 [20%]; 周骏迪 [20%]; 陈豪明 [20%] | 1h | 1h | 31 | 31 |  |  |
| 64 | 3.1.36 | 分发调查问卷 | manual | 1h | 2017-11-20 08:00 A | 2017-11-20 09:00 A | 63 | 100% |  |  | 戴恺铖 [20%]; 朱赛奎 [20%]; 周骏迪 [20%]; 陈豪明 [20%] | 0.8h | 0.8h | 24.8 | 24.8 |  |  |
| 65 | 3.1.37 | 观察用户如何完成工作 | manual | 1h | 2017-11-20 09:00 A | 2017-11-20 10:00 A | 64 | 100% |  |  | 戴恺铖 [60%]; 朱赛奎 [10%]; 陈潮鸣 [10%]; 周骏迪 [10%]; 陈豪明 [10%] | 0.4h | 0.4h | 12.4 | 12.4 |  |  |
| 66 | 3.1.38 | 分析文档 | manual | 1h | 2017-11-21 08:00 A | 2017-11-21 09:00 A | 65 | 100% |  |  | 戴恺铖 [10%]; 朱赛奎 [40%]; 陈潮鸣 [10%]; 周骏迪 [40%]; 陈豪明 | 1h | 1h | 31 | 31 | 朱赛奎、周骏迪 | 戴恺铖、陈潮鸣、陈豪明 |
| 67 | 3.1.39 | 检查问题报告 | manual | 1h | 2017-11-21 08:00 A | 2017-11-21 09:00 A | 66 | 100% |  |  | 戴恺铖 [20%]; 朱赛奎 [20%]; 陈潮鸣 [20%]; 周骏迪 [20%]; 陈豪明 [20%] | 0.8h | 0.8h | 24.8 | 24.8 |  |  |
| 68 | 3.1.40 | 重用已有的需求 | manual | 2h | 2017-11-21 09:00 A | 2017-11-21 11:00 A | 67 | 100% |  |  | 戴恺铖 [20%]; 朱赛奎 [20%]; 陈潮鸣 [20%]; 周骏迪 [20%]; 陈豪明 [20%] | 2h | 2h | 62 | 62 |  |  |

| ID | WBS | Task | Type | Duration | Start | Finish | Predecessors | Complete | Resources | Work | Actual work | Cost | Actual cost | 负责人 | 相关人员 |
| --- | --- | --- | --- | --- | --- | --- | --- | --- | --- | --- | --- | --- | --- | --- | --- |
| 69 | 3.2 | **需求分析** |  | 6.12d | 2017-11-21 11:00 A | 2017-11-27 12:00 A | 28 | 100% |  | 20h | 20h | 620 | 620 | 陈潮鸣 | 戴恺铖、陈豪明、朱赛奎、周骏迪 |
| 70 | 3.2.1 | 应用环境建模 | manual | 2h | 2017-11-21 11:00 A | 2017-11-21 14:00 A | 68 | 100% | 戴恺铖 [20%]; 朱赛奎 [20%]; 陈潮鸣 [20%]; 周骏迪 [20%]; 陈豪明 [20%] | 2h | 2h | 62 | 62 |  |  |
| 71 | 3.2.2 | 创建原型-进一步确定 | manual | 3h | 2017-11-21 14:00 A | 2017-11-21 17:00 A | 70 | 100% | 戴恺铖 [20%]; 朱赛奎 [20%]; 陈潮鸣 [20%]; 周骏迪 [20%]; 陈豪明 [20%] | 3h | 3h | 93 | 93 |  |  |
| 72 | 3.2.3 | 分析可实现性 | manual | 2h | 2017-11-22 08:00 A | 2017-11-22 10:00 A | 71 | 100% | 戴恺铖 [10%]; 朱赛奎 [20%]; 陈潮鸣 [40%]; 周骏迪 [20%]; 陈豪明 [10%] | 2h | 2h | 62 | 62 |  |  |
| 73 | 3.2.4 | 排列需求优先级 | manual | 2h | 2017-11-22 10:00 A | 2017-11-22 12:00 A | 72 | 100% | 戴恺铖 [10%]; 朱赛奎 [20%]; 陈潮鸣 [40%]; 周骏迪 [20%]; 陈豪明 [10%] | 2h | 2h | 62 | 62 |  |  |
| 74 | 3.2.5 | 创建数据字典 | manual | 2h | 2017-11-22 13:00 A | 2017-11-22 15:00 A | 73 | 100% | 戴恺铖 [10%]; 朱赛奎 [20%]; 陈潮鸣 [40%]; 周骏迪 [20%]; 陈豪明 [10%] | 2h | 2h | 62 | 62 |  |  |
| 75 | 3.2.6 | 需求建模 | manual | 1h | 2017-11-22 15:00 A | 2017-11-22 16:00 A | 74 | 100% | 戴恺铖 [10%]; 朱赛奎 [20%]; 陈潮鸣 [40%]; 周骏迪 [20%]; 陈豪明 [10%] | 1h | 1h | 31 | 31 |  |  |
| 76 | 3.2.7 | 分析接口 | manual | 1h | 2017-11-22 16:00 A | 2017-11-22 17:00 A | 75 | 100% | 戴恺铖 [10%]; 朱赛奎 [20%]; 陈潮鸣 [40%]; 周骏迪 [20%]; 陈豪明 [10%] | 1h | 1h | 31 | 31 |  |  |
| 77 | 3.2.8 | 将需求分配到子系统 | manual | 1h | 2017-11-23 08:00 A | 2017-11-23 09:00 A | 76 | 100% | 戴恺铖 [10%]; 朱赛奎 [20%]; 陈潮鸣 [40%]; 周骏迪 [20%]; 陈豪明 [10%] | 1h | 1h | 31 | 31 |  |  |
| 78 | 3.2.9 | 第八周第一次会议 | manual | 1h | 2017-11-23 09:00 A | 2017-11-23 10:00 A | 77 | 100% | 戴恺铖 [20%]; 朱赛奎 [20%]; 陈潮鸣 [20%]; 周骏迪 [20%]; 陈豪明 [20%] | 1h | 1h | 31 | 31 |  |  |
| 79 | 3.2.10 | 界面原型PPT 评审 | milestone, manual | 0h | 2017-11-24 08:00 A | 2017-11-24 08:00 A | 78 | 100% |  |  |  |  |  |  |  |
| 80 | 3.2.11 | 第八周第二次会议 | manual | 2h | 2017-11-26 08:00 A | 2017-11-26 12:00 A | 79 | 100% | 戴恺铖 [20%]; 朱赛奎 [20%]; 陈潮鸣 [20%]; 周骏迪 [20%]; 陈豪明 [20%] | 1h | 1h | 31 | 31 |  |  |
| 81 | 3.2.12 | 记录业务规则 | manual | 4h | 2017-11-27 08:00 A | 2017-11-27 12:00 A | 80 | 100% | 戴恺铖 [10%]; 朱赛奎 [10%]; 陈潮鸣 [10%]; 周骏迪 [60%]; 陈豪明 [10%] | 4h | 4h | 124 | 124 | 周骏迪 | 戴恺铖、陈潮鸣、陈豪明、朱赛奎 |
| 82 | 3.3 | **需求规格说明** |  | 14d | 2017-11-26 08:00 A | 2017-12-10 08:00 A | 69 | 100% |  | 33h | 33h | 1,023 | 1,023 | 周骏迪 | 戴恺铖、陈潮鸣、陈豪明、朱赛奎 |
| 83 | 3.3.1 | 采用需求规范文档模板 | manual | 1h | 2017-11-26 08:00 A | 2017-11-26 09:00 A | 78 | 100% | 戴恺铖 [10%]; 朱赛奎 [10%]; 陈潮鸣 [10%]; 周骏迪 [60%]; 陈豪明 [10%] | 1h | 1h | 31 | 31 |  |  |
| 84 | 3.3.2 | 第九周第一次会议 | manual | 1h | 2017-11-30 08:00 A | 2017-11-30 09:00 A | 81 | 100% | 戴恺铖 [20%]; 朱赛奎 [20%]; 陈潮鸣 [20%]; 周骏迪 [20%]; 陈豪明 [20%] | 1h | 1h | 31 | 31 |  |  |
| 85 | 3.3.3 | 为每个分配标识 | manual | 1h | 2017-11-30 09:00 A | 2017-11-30 10:00 A | 84 | 100% | 戴恺铖 [10%]; 朱赛奎 [10%]; 陈潮鸣 [10%]; 周骏迪 [60%]; 陈豪明 [10%] | 1h | 1h | 31 | 31 | 周骏迪 | 戴恺铖、陈潮鸣、陈豪明、朱赛奎 |
| 86 | 3.3.4 | 识别需求源头 | manual | 2h | 2017-11-30 10:00 A | 2017-11-30 12:00 A | 85 | 100% | 戴恺铖 [10%]; 朱赛奎 [10%]; 陈潮鸣 [10%]; 周骏迪 [60%]; 陈豪明 [10%] | 2h | 2h | 62 | 62 | 周骏迪 | 戴恺铖、陈潮鸣、陈豪明、朱赛奎 |
| 87 | 3.3.5 | 准备学生访谈 | manual | 4h | 2017-12-04 08:00 A | 2017-12-04 12:00 A | 86 | 100% | 戴恺铖 [20%]; 朱赛奎 [20%]; 陈潮鸣 [20%]; 周骏迪 [20%]; 陈豪明 [20%] | 4h | 4h | 124 | 124 |  |  |
| 88 | 3.3.6 | 学生访谈 | milestone, manual | 1h | 2017-12-05 08:00 A | 2017-12-05 09:00 A | 87 | 100% | 戴恺铖 [20%]; 朱赛奎 [20%]; 陈潮鸣 [20%]; 周骏迪 [20%]; 陈豪明 [20%] | 1h | 1h | 31 | 31 |  |  |
| 89 | 3.3.7 | 准备管理员访谈 | manual | 8h | 2017-12-05 08:00 A | 2017-12-05 17:00 A | 88 | 100% | 戴恺铖 [20%]; 朱赛奎 [20%]; 陈潮鸣 [20%]; 周骏迪 [20%]; 陈豪明 [20%] | 8h | 8h | 248 | 248 |  |  |
| 90 | 3.3.8 | 管理员访谈 | milestone, manual | 1h | 2017-12-06 08:00 A | 2017-12-06 09:00 A | 89 | 100% | 戴恺铖 [20%]; 朱赛奎 [20%]; 陈潮鸣 [20%]; 周骏迪 [20%]; 陈豪明 [20%] | 1h | 1h | 31 | 31 |  |  |
| 91 | 3.3.9 | 准备教师访谈 | manual | 4h | 2017-12-06 09:00 A | 2017-12-06 14:00 A | 90 | 100% | 戴恺铖 [20%]; 朱赛奎 [20%]; 陈潮鸣 [20%]; 周骏迪 [20%]; 陈豪明 [20%] | 4h | 4h | 124 | 124 |  |  |
| 92 | 3.3.10 | 课堂教师访谈 | milestone, manual | 1h | 2017-12-07 08:00 A | 2017-12-07 09:00 A | 91 | 100% | 戴恺铖 [20%]; 朱赛奎 [20%]; 陈潮鸣 [20%]; 周骏迪 [20%]; 陈豪明 [20%] | 1h | 1h | 31 | 31 |  |  |
| 93 | 3.3.11 | 第十周第一次会议 | manual | 1h | 2017-12-07 08:00 A | 2017-12-07 09:00 A | 92, 90, 88 | 100% | 戴恺铖 [20%]; 朱赛奎 [20%]; 陈潮鸣 [20%]; 周骏迪 [20%]; 陈豪明 [20%] | 1h | 1h | 31 | 31 |  |  |
| 94 | 3.3.12 | 界面原型V1.0 | manual | 8h | 2017-12-07 09:00 A | 2017-12-08 09:00 A | 93 | 100% | 戴恺铖 [20%]; 朱赛奎 [20%]; 陈潮鸣 [20%]; 周骏迪 [20%]; 陈豪明 [20%] | 8h | 8h | 248 | 248 |  |  |
| 95 | 3.3.13 | 《需求规格说明书》V0.1 | milestone, manual | 0h | 2017-12-10 08:00 A | 2017-12-10 08:00 A | 94 | 100% |  |  |  |  |  | 戴恺铖 | 周骏迪 |

| ID | WBS | Task | Type | Duration | Start | Finish | Predecessors | Total slack | Constraint | Resources | Work | Cost | 负责人 | 相关人员 |
| --- | --- | --- | --- | --- | --- | --- | --- | --- | --- | --- | --- | --- | --- | --- |
| 96 | 3.4 | **需求规格审核** |  | 4.5d | 2017-12-14 08:00 | 2017-12-18 12:00 | 82 | 0d |  |  | 22h | 682 | 朱赛奎 | 戴恺铖、陈潮鸣、陈豪明、周骏迪 |
| 97 | 3.4.1 | 第十一周第一次会议 | manual | 1h | 2017-12-14 08:00 | 2017-12-14 09:00 | 95 |  |  | 戴恺铖 [20%]; 朱赛奎 [20%]; 陈潮鸣 [20%]; 周骏迪 [20%]; 陈豪明 [20%] | 1h | 31 |  |  |
| 98 | 3.4.2 | 评审需求 | manual | 4h | 2017-12-15 08:00 | 2017-12-15 12:00 | 97 |  |  | 戴恺铖 [10%]; 朱赛奎 [60%]; 陈潮鸣 [10%]; 周骏迪 [10%]; 陈豪明 [10%] | 4h | 124 | 朱赛奎 | 戴恺铖、陈潮鸣、陈豪明、周骏迪 |
| 99 | 3.4.3 | 测试需求 | manual | 4h | 2017-12-15 08:00 | 2017-12-15 12:00 | 97 |  |  | 戴恺铖 [10%]; 朱赛奎 [60%]; 陈潮鸣 [10%]; 周骏迪 [10%]; 陈豪明 [10%] | 4h | 124 | 朱赛奎 | 戴恺铖、陈潮鸣、陈豪明、周骏迪 |
| 100 | 3.4.4 | 《需求规格说明书》修改 | manual | 4h | 2017-12-16 08:00 | 2017-12-16 12:00 | 97 |  |  | 戴恺铖 [20%]; 朱赛奎 [20%]; 陈潮鸣 [20%]; 周骏迪 [20%]; 陈豪明 [20%] | 4h | 124 |  |  |
| 101 | 3.4.5 | 第十一周第二次会议 | manual | 1h | 2017-12-17 08:00 | 2017-12-17 09:00 | 100 |  |  | 戴恺铖 [20%]; 朱赛奎 [20%]; 陈潮鸣 [20%]; 周骏迪 [20%]; 陈豪明 [20%] | 1h | 31 |  |  |
| 102 | 3.4.6 | 模拟需求 | manual | 4h | 2017-12-18 08:00 | 2017-12-18 12:00 | 101 |  |  | 戴恺铖 [10%]; 朱赛奎 [60%]; 陈潮鸣 [10%]; 周骏迪 [10%]; 陈豪明 [10%] | 4h | 124 | 朱赛奎 | 戴恺铖、陈潮鸣、陈豪明、周骏迪 |
| 103 | 3.4.7 | 定义验收条件 | manual | 4h | 2017-12-18 08:00 | 2017-12-18 12:00 | 101 |  |  | 戴恺铖 [10%]; 朱赛奎 [60%]; 陈潮鸣 [10%]; 周骏迪 [10%]; 陈豪明 [10%] | 4h | 124 | 朱赛奎 | 戴恺铖、陈潮鸣、陈豪明、周骏迪 |
| 104 | 4 | **项目管理过程** |  | 20d | 2017-12-18 08:00 | 2018-01-07 08:00 | 27 | 0d |  |  | 81.2h | 2,517.2 | 陈豪明 | 戴恺铖、陈潮鸣、朱赛奎、周骏迪 |
| 105 | 4.1 | 《软件需求变更文档》V0.1 | manual | 4h | 2017-12-18 08:00 | 2017-12-18 12:00 | 101 |  |  | 戴恺铖 [10%]; 朱赛奎 [10%]; 陈潮鸣 [10%]; 周骏迪 [10%]; 陈豪明 [60%] | 4h | 124 |  |  |
| 106 | 4.2 | 第十二周第一次会议 | manual | 1h | 2017-12-21 08:00 | 2017-12-21 09:00 | 100 |  |  | 戴恺铖 [20%]; 朱赛奎 [20%]; 陈潮鸣 [20%]; 周骏迪 [20%]; 陈豪明 [20%] | 1h | 31 |  |  |
| 107 | 4.3 | 《软件需求变更文档》小组评审 | manual | 2h | 2017-12-22 08:00 | 2017-12-22 10:00 | 106 |  |  | 戴恺铖 [20%]; 朱赛奎 [20%]; 陈潮鸣 [20%]; 周骏迪 [20%]; 陈豪明 [20%] | 2h | 62 |  |  |
| 108 | 4.4 | 《软件需求变更文档》V0.X | manual | 4h | 2017-12-22 08:00 | 2017-12-22 12:00 | 106 |  |  | 戴恺铖 [20%]; 朱赛奎 [20%]; 陈潮鸣 [20%]; 周骏迪 [20%]; 陈豪明 [20%] | 4h | 124 |  |  |
| 109 | 4.5 | 建立变更控制流程 | manual | 2h | 2017-12-22 08:00 | 2017-12-22 10:00 | 106 |  | start no earlier than 2017-12-11 08:00 | 戴恺铖 [10%]; 朱赛奎 [10%]; 陈潮鸣 [10%]; 周骏迪 [10%]; 陈豪明 [60%] | 2h | 62 | 陈豪明 | 戴恺铖、陈潮鸣、朱赛奎、周骏迪 |
| 110 | 4.6 | 分析变更影响 | manual | 4h | 2017-12-22 08:00 | 2017-12-22 12:00 | 106 |  |  | 戴恺铖 [10%]; 朱赛奎 [10%]; 陈潮鸣 [10%]; 周骏迪 [10%]; 陈豪明 [60%] | 4h | 124 | 陈豪明 | 戴恺铖、陈潮鸣、朱赛奎、周骏迪 |
| 111 | 4.7 | 建立基线，管理需求版本 | manual | 2h | 2017-12-22 08:00 | 2017-12-22 10:00 | 106 |  |  | 戴恺铖 [10%]; 朱赛奎 [10%]; 陈潮鸣 [10%]; 周骏迪 [10%]; 陈豪明 [60%] | 2h | 62 | 陈豪明 | 戴恺铖、陈潮鸣、朱赛奎、周骏迪 |
| 112 | 4.8 | 《软件需求变更文档》修改 | manual | 1d | 2017-12-22 13:00 | 2017-12-23 12:00 | 108 |  |  | 戴恺铖 [20%]; 朱赛奎 [20%]; 陈潮鸣 [20%]; 周骏迪 [20%]; 陈豪明 [20%] | 8h | 248 |  |  |
| 113 | 4.9 | 《软件需求变更文档》V1.0提交 | milestone, manual | 0h | 2017-12-24 08:00 | 2017-12-24 08:00 | 112 |  |  |  |  |  | 戴恺铖 | 陈豪明 |
| 114 | 4.10 | 第十二周第二次会议 | manual | 1h | 2017-12-24 08:00 | 2017-12-24 09:00 | 113 |  |  | 戴恺铖 [20%]; 朱赛奎 [20%]; 陈潮鸣 [20%]; 周骏迪 [20%]; 陈豪明 [20%] | 1h | 31 |  |  |
| 115 | 4.11 | 使用需求管理工具 | manual | 2h | 2017-12-25 08:00 | 2017-12-25 10:00 | 114 |  |  | 戴恺铖 [20%]; 朱赛奎 [20%]; 陈潮鸣 [20%]; 周骏迪 [20%]; 陈豪明 [20%] | 2h | 62 |  |  |
| 116 | 4.12 | 维护变更历史 | manual | 1h | 2017-12-25 08:00 | 2017-12-25 09:00 | 114 |  |  | 戴恺铖 [20%]; 朱赛奎 [20%]; 陈潮鸣 [20%]; 周骏迪 [20%]; 陈豪明 [20%] | 1h | 31 |  |  |
| 117 | 4.13 | 《软件需求变更文档》修改 | manual | 4h | 2017-12-26 08:00 | 2017-12-26 12:00 | 114 |  |  | 戴恺铖 [20%]; 朱赛奎 [20%]; 陈潮鸣 [20%]; 周骏迪 [20%]; 陈豪明 [20%] | 4h | 124 |  |  |
| 118 | 4.14 | 《软件需求变更文档》接受评审 | milestone, manual | 0h | 2017-12-28 08:00 | 2017-12-28 08:00 | 117 |  |  |  |  |  | 戴恺铖 | 陈潮鸣、陈豪明、周骏迪、朱赛奎 |
| 119 | 4.15 | 第十三周第一次会议 | manual | 1h | 2017-12-29 08:00 | 2017-12-29 09:00 | 118 |  |  | 戴恺铖 [20%]; 朱赛奎 [20%]; 陈潮鸣 [20%]; 周骏迪 [20%]; 陈豪明 [20%] | 1h | 31 |  |  |
| 120 | 4.16 | 维护需求可跟踪矩阵 | manual | 4h | 2017-12-30 08:00 | 2017-12-30 12:00 | 119 |  |  | 戴恺铖 [20%]; 朱赛奎 [20%]; 陈潮鸣 [20%]; 周骏迪 [20%]; 陈豪明 [20%] | 4h | 124 |  |  |
| 121 | 4.17 | 跟踪需求问题 | manual | 4h | 2017-12-30 08:00 | 2017-12-30 12:00 | 119 |  |  | 戴恺铖 [20%]; 朱赛奎 [20%]; 陈潮鸣 [20%]; 周骏迪 [20%]; 陈豪明 [20%] | 4h | 124 |  |  |
| 122 | 4.18 | 维护需求问题 | manual | 2h | 2017-12-30 08:00 | 2017-12-30 10:00 | 119 |  |  | 戴恺铖 [20%]; 朱赛奎 [20%]; 陈潮鸣 [20%]; 周骏迪 [20%]; 陈豪明 [20%] | 2h | 62 |  |  |
| 123 | 4.19 | 《软件需求变更文档》完善 | manual | 4h | 2017-12-30 08:00 | 2017-12-30 12:00 | 119 |  |  | 戴恺铖 [20%]; 朱赛奎 [20%]; 陈潮鸣 [20%]; 周骏迪 [20%]; 陈豪明 [20%] | 4h | 124 |  |  |
| 124 | 4.20 | 第十三周第二次会议 | manual | 1h | 2017-12-31 08:00 | 2017-12-31 09:00 | 123 |  |  | 戴恺铖 [20%]; 朱赛奎 [20%]; 陈潮鸣 [20%]; 周骏迪 [20%]; 陈豪明 [20%] | 1h | 31 |  |  |
| 125 | 4.21 | 《软件需求变更文档》V2.0提交 | milestone, manual | 0h | 2018-01-01 08:00 | 2018-01-01 08:00 | 124 |  |  |  |  |  | 戴恺铖 | 陈豪明 |

| ID | WBS | Task | Type | Duration | Start | Finish | Predecessors | Total slack | Constraint | Resources | Work | Cost | 负责人 | 相关人员 |
| --- | --- | --- | --- | --- | --- | --- | --- | --- | --- | --- | --- | --- | --- | --- |
| 126 | 4.22 | **软件概要设计** |  | 6d | 2018-01-01 08:00 | 2018-01-07 08:00 | 124 | 0d |  |  | 15h | 465 | 戴恺铖 |  |
| 127 | 4.22.1 | 《软件概要设计说明书》V0.1 | manual | 4h | 2018-01-01 08:00 | 2018-01-01 12:00 | 124 |  |  | 戴恺铖 [20%]; 朱赛奎 [20%]; 陈潮鸣 [20%]; 周骏迪 [20%]; 陈豪明 [20%] | 4h | 124 |  |  |
| 128 | 4.22.2 | 《软件概要设计说明书》小组评审 | manual | 2h | 2018-01-02 08:48 | 2018-01-02 10:48 | 127 |  |  | 戴恺铖 [20%]; 朱赛奎 [20%]; 陈潮鸣 [20%]; 周骏迪 [20%]; 陈豪明 [20%] | 2h | 62 |  |  |
| 129 | 4.22.3 | 《软件概要设计说明书》V0.X | manual | 4h | 2018-01-03 08:48 | 2018-01-03 13:48 | 128 |  |  | 戴恺铖 [20%]; 朱赛奎 [20%]; 陈潮鸣 [20%]; 周骏迪 [20%]; 陈豪明 [20%] | 4h | 124 | 戴恺铖 |  |
| 130 | 4.22.4 | 第十四周第一次会议 | manual | 1h | 2018-01-04 08:48 | 2018-01-04 09:48 | 129 |  |  | 戴恺铖 [20%]; 朱赛奎 [20%]; 陈潮鸣 [20%]; 周骏迪 [20%]; 陈豪明 [20%] | 1h | 31 |  |  |
| 131 | 4.22.5 | 《软件概要设计说明书》完善 | manual | 4h | 2018-01-05 08:00 | 2018-01-05 12:00 | 130 |  |  | 戴恺铖 [40%]; 朱赛奎; 陈潮鸣 [60%]; 周骏迪; 陈豪明 | 4h | 124 | 陈潮鸣 | 戴恺铖 |
| 132 | 4.22.6 | 《软件概要设计说明书》提交 | milestone, manual | 0h | 2018-01-07 08:00 | 2018-01-07 08:00 | 131 |  |  |  |  |  | 戴恺铖 | 陈潮鸣、陈豪明、周骏迪、朱赛奎 |
| 133 | 4.23 | UML与设计模式了解 | manual | 4h | 2018-01-05 08:00 | 2018-01-05 12:00 | 130 |  | start no earlier than 2018-01-06 08:00 | 戴恺铖 [50%]; 朱赛奎 [20%]; 陈潮鸣 [30%]; 周骏迪; 陈豪明 | 4h | 124 |  |  |
| 134 | 4.24 | UML与数据库设计了解 | manual | 4h | 2018-01-05 08:00 | 2018-01-05 12:00 | 130 |  |  | 戴恺铖 [20%]; 朱赛奎; 陈潮鸣 [50%]; 周骏迪 [10%]; 陈豪明 | 3.2h | 99.2 | 陈潮鸣 | 戴恺铖、陈豪明、朱赛奎、周骏迪 |
| 135 | 4.25 | UML与体系架构设计了解 | manual | 4h | 2018-01-05 08:00 | 2018-01-05 12:00 | 130 |  |  | 戴恺铖; 朱赛奎; 陈潮鸣 [20%]; 周骏迪 [30%]; 陈豪明 [50%] | 4h | 124 | 陈豪明 | 戴恺铖、陈潮鸣、朱赛奎、周骏迪 |
| 136 | 4.26 | UML与设计模式、数据库设计、体系架构设计关系PPT制作 | manual | 3h | 2018-01-04 09:48 | 2018-01-04 13:48 | 130 |  |  | 戴恺铖 [20%]; 朱赛奎 [20%]; 陈潮鸣 [20%]; 周骏迪 [20%]; 陈豪明 [20%] | 3h | 93 | 朱赛奎、周骏迪 | 戴恺铖、陈潮鸣、陈豪明 |
| 137 | 4.27 | 第十四周第二次会议 | manual | 1h | 2018-01-06 09:48 | 2018-01-06 10:48 | 136 |  |  | 戴恺铖 [20%]; 朱赛奎 [20%]; 陈潮鸣 [20%]; 周骏迪 [20%]; 陈豪明 [20%] | 1h | 31 |  | 陈潮鸣、陈豪明、周骏迪、朱赛奎 |
| 138 | 5 | **项目收尾** |  | 5d | 2018-01-08 08:00 | 2018-01-12 17:00 | 104 | 0d |  |  | 25h | 775 | 戴恺铖 | 陈潮鸣、陈豪明、周骏迪、朱赛奎 |
| 139 | 5.1 | 各文档审查 | manual | 8h | 2018-01-08 08:00 | 2018-01-08 17:00 | 137 |  |  | 戴恺铖 [20%]; 朱赛奎 [20%]; 陈潮鸣 [20%]; 周骏迪 [20%]; 陈豪明 [20%] | 8h | 248 | 陈潮鸣、陈豪明 | 戴恺铖、朱赛奎、周骏迪 |
| 140 | 5.2 | 整理文档 | manual | 1d | 2018-01-08 08:00 | 2018-01-08 17:00 | 137 |  |  | 戴恺铖 [20%]; 朱赛奎 [20%]; 陈潮鸣 [20%]; 周骏迪 [20%]; 陈豪明 [20%] | 8h | 248 | 朱赛奎、周骏迪 | 戴恺铖、陈潮鸣、陈豪明 |
| 141 | 5.3 | 第十五周第一次会议 | manual | 1h | 2018-01-11 08:00 | 2018-01-11 09:00 | 140 |  |  | 戴恺铖 [20%]; 朱赛奎 [20%]; 陈潮鸣 [20%]; 周骏迪 [20%]; 陈豪明 [20%] | 1h | 31 |  |  |
| 142 | 5.4 | 项目总结 | manual | 8h | 2018-01-12 08:00 | 2018-01-12 17:00 | 141 |  |  | 戴恺铖 [20%]; 朱赛奎 [20%]; 陈潮鸣 [20%]; 周骏迪 [20%]; 陈豪明 [20%] | 8h | 248 | 戴恺铖 |  |
